| id | projectId | title | startDate | durationText | percentComplete | outlineLevel | parentId | priority | tenantId | wbs |
| --- | --- | --- | --- | --- | --- | --- | --- | --- | --- | --- |
| 03sXRpiBIBCEyqV7r4iY | 9iqygviz3AGJnbJOLc8E | III.4.2.1.4 Creación y Validación de Paradas | 1770123600000 | 1 día | 0 | 7 | 1.1.1.6.3.1 | Media | 3 | 1.1.1.6.3.1.5 |
| 0LWLdaho5iZFIiOdiieQ | 9iqygviz3AGJnbJOLc8E | III.1.1.3 Mapear Pedidos - Confirmación y VL (CrearOrdenPedido) ERP-TMS (#3) | 1764925200000 | 1 día | 0 | 6 | 1.1.1.1.1 | Media | 3 | 1.1.1.1.1.3 |
| 0OJf9iZjf5C0Qs2K2Ksy | 9iqygviz3AGJnbJOLc8E | III.4.2.4.4 Ajuste de proceso Editar Pedidos OM tras pruebas unitarias de cliente | 1773752400000 | 4 horas | 0 | 7 | 1.1.1.6.3.4 | Media | 3 | 1.1.1.6.3.4.4 |
| 0cBzOVqfbdTwk6IowLo7 | 9iqygviz3AGJnbJOLc8E | III.4.2.1.5.4.1 Tendering | 1770368400000 | 2 días | 0 | 9 | 1.1.1.6.3.1.6.4 | Media | 3 | 1.1.1.6.3.1.6.4.1 |
| 0on6EOxtRAntVfSLs3iu | 9iqygviz3AGJnbJOLc8E | III.5.2.2 Ajustar cobranzas v2 tras pruebas UNI en TEST | 1774256400000 | 7 días | 0 | 6 | 1.1.1.7.2 | Media | 3 | 1.1.1.7.2.2 |
| 0wG9hp8jFhktqvMeFwG2 | 9iqygviz3AGJnbJOLc8E | III.1.2 Elaborar el documento de mapeo de interfaces | 1765530000000 | 4 horas | 0 | 5 | 1.1.1.1 | Media | 3 | 1.1.1.1.2 |
| 0yZmuxHScVlTITYRg9RC | 9iqygviz3AGJnbJOLc8E | III.4.4.4.3 Pruebas y ajustes | 1775048400000 | 4 horas | 0 | 7 | 1.1.1.6.7.5 | Media | 3 | 1.1.1.6.7.5.2 |
| 1EOavQRbPuEn6IlqSlOb | 9iqygviz3AGJnbJOLc8E | III.7 Realizar pruebas integrales | 1780405200000 | 8 días | 0 | 4 | 1.1.1 | Media | 3 | 1.1.1.9 |
| 1RgJc4LYOhgR4f8JPXl4 | 9iqygviz3AGJnbJOLc8E | IV.2.2.6 Cargar información en producción | 1782918000000 | 4 horas | 0 | 6 | 1.1.2.2.2 | Media | 3 | 1.1.2.2.2.6 |
| 1oGcDFagJFYwyk0ggvtR | 9iqygviz3AGJnbJOLc8E | III.4.1.9 Europastry Compilar datos de conductores para UNI | 1765371600000 | 4 horas | 0 | 6 | 1.1.1.6.1 | Media | 3 | 1.1.1.6.1.9 |
| 1qtx4XSblydZzReFmtWo | 9iqygviz3AGJnbJOLc8E | ETAPA IV: Preparación para producción | 1781269200000 | 15,75 días | 0 | 3 | 1.1 | Media | 3 | 1.1.2 |
| 1s4PEXfxlfJy6a67LcVL | 9iqygviz3AGJnbJOLc8E | III.4.6.5 Tasa de utilización de la flota vehicular. | 1777539600000 | 1,5 días | 0 | 6 | 1.1.1.6.10 | Media | 3 | 1.1.1.6.10.5 |
| 1uvVimMoxsNW9QvYuTs9 | 9iqygviz3AGJnbJOLc8E | III.4.2.1.2.6 Proceso que actualiza datos de la Orden en la creacion | 1768309200000 | 2 días | 0 | 8 | 1.1.1.6.3.1.3 | Media | 3 | 1.1.1.6.3.1.3.6 |
| 1xfWW4ZIUTYhEfgxxl6p | 9iqygviz3AGJnbJOLc8E | III.1.1.6 Unigis configurar Liquidación Tarifa - Preliquidación de Pago a Proveedores TMS-ERP para JSON Syncout (#9) | 1768827600000 | 5 días | 0 | 6 | 1.1.1.3.2 | Media | 3 | 1.1.1.3.2.6 |
| 23R4WTJTFYWwpOrwm19K | 9iqygviz3AGJnbJOLc8E | III.4.2.1.5.6 Configurar Tipo de Paradas | 1770973200000 | 4 horas | 0 | 8 | 1.1.1.6.3.1.6 | Media | 3 | 1.1.1.6.3.1.6.6 |
| 2V8clbTfU9BlSyG2toDK | 9iqygviz3AGJnbJOLc8E | IV.1.2.5 Capacitación Key-User (Setup) | 1781701200000 | 4 horas | 0 | 6 | 1.1.2.1.2 | Media | 3 | 1.1.2.1.2.5 |
| 2Wjyvru5DpfhuBKWiItF | 9iqygviz3AGJnbJOLc8E | III.5.1.1 Nuevo módulo de cobranzas | 1773648000000 | 0 días | 0 | 6 | 1.1.1.7.1 | Media | 3 | 1.1.1.7.1.1 |
| 2XQXjrxQJIcnnQHTL60t | 9iqygviz3AGJnbJOLc8E | III.4.2.1.5.4.4 Configurar asignacion automatica de Viajes a usuarios | 1770800400000 | 1 día | 0 | 9 | 1.1.1.6.3.1.6.4 | Media | 3 | 1.1.1.6.3.1.6.4.4 |
| 2qzA9D2EzpAxlkUaPjJJ | 9iqygviz3AGJnbJOLc8E | III.4.4.1 Europastry compartir lista y especificación de alarmas (con lógica de trigger) | 1774530000000 | 4 horas | 0 | 6 | 1.1.1.6.7 | Media | 3 | 1.1.1.6.7.1 |
| 2rRIAOXU1nSOAOAj1rEa | 9iqygviz3AGJnbJOLc8E | III.4.6.2.2 Configuración en entorno de test | 1776949200000 | 1 día | 0 | 7 | 1.1.1.6.10.2 | Media | 3 | 1.1.1.6.10.2.1 |
| 2unkmsQTNr0t86qQiO0l | 9iqygviz3AGJnbJOLc8E | III.4.2.2.1 Realizar pruebas unitarias de visualización de pedidos en OM | 1772787600000 | 1 día | 0 | 7 | 1.1.1.6.3.2 | Media | 3 | 1.1.1.6.3.2.1 |
| 3JPzPenaC7qYaLEt5ecJ | 9iqygviz3AGJnbJOLc8E | III.4.2.1.3.5 Configurar Modelo de Condiciones | 1768827600000 | 1 día | 0 | 8 | 1.1.1.6.3.1.4 | Media | 3 | 1.1.1.6.3.1.4.4 |
| 3PxQHpOhIsWX3d5hayNs | 9iqygviz3AGJnbJOLc8E | III.1.1.5 Europastry configurar Viajes - Envío Paradas preparadas y Doc cobros ERP-TMS MAPI (#5) | 1766149200000 | 1 día | 0 | 6 | 1.1.1.3.1 | Media | 3 | 1.1.1.3.1.5 |
| 3UILgVtdEda7FNLXjcef | 9iqygviz3AGJnbJOLc8E | III.4.4.6 Configurar Alarma No regreso a la nave si tiene rechazos en menos de 1h. | 1775120400000 | 1,5 días | 0 | 6 | 1.1.1.6.7 | Media | 3 | 1.1.1.6.7.6 |
| 3mYCK27rjKhVmBCTvm98 | 9iqygviz3AGJnbJOLc8E | III.1.1.1 Europastry configurar Pedidos - Creación, Modificación y Anulación MAPI ERP-TMS (#1) | 1765803600000 | 1 día | 0 | 6 | 1.1.1.3.1 | Media | 3 | 1.1.1.3.1.1 |
| 3pnmlbGBrLWrhZKlSuyc | 9iqygviz3AGJnbJOLc8E | III.4.2.1.3.12 Configurar Restriccion de TipoVehiculo-DomicilioOrden | 1769763600000 | 4 horas | 0 | 8 | 1.1.1.6.3.1.4 | Media | 3 | 1.1.1.6.3.1.4.12 |
| 445ZSCchR5RRwKT504gb | 9iqygviz3AGJnbJOLc8E | III.4.2.1.3.15 Configurar Proceso post importación | 1770037200000 | 1 día | 0 | 8 | 1.1.1.6.3.1.4 | Media | 3 | 1.1.1.6.3.1.4.15 |
| 4CRzQl4m3Iu5UuF8mcnv | 9iqygviz3AGJnbJOLc8E | IV.1.3 Certificar usuarios finales (UAT) | 1782291600000 | 4 horas | 0 | 5 | 1.1.2.1 | Media | 3 | 1.1.2.1.3 |
| 4EIZzJRJiE9DbIZ8Wun3 | 9iqygviz3AGJnbJOLc8E | IV.2.2.5 Realizar pasaje a producción | 1782903600000 | 4 horas | 0 | 6 | 1.1.2.2.2 | Media | 3 | 1.1.2.2.2.5 |
| 4RkpTwPwAcCTdcMqCM9a | 9iqygviz3AGJnbJOLc8E | III.4.6.2.3 Pruebas y ajustes | 1777035600000 | 4 horas | 0 | 7 | 1.1.1.6.10.2 | Media | 3 | 1.1.1.6.10.2.2 |
| 50NMd9a5e5kS5XbNcBum | 9iqygviz3AGJnbJOLc8E | III.4.1.5 Europastry Compilar datos de Transportes y Tipo para UNI | 1764939600000 | 4 horas | 0 | 6 | 1.1.1.6.1 | Media | 3 | 1.1.1.6.1.5 |
| 527MDIOy35H9nZXWvsEX | 9iqygviz3AGJnbJOLc8E | IV.2.2.4 Depurar ambiente de test | 1782817200000 | 1 día | 0 | 6 | 1.1.2.2.2 | Media | 3 | 1.1.2.2.2.4 |
| 5bayjNp1wUce2QBsRSM2 | 9iqygviz3AGJnbJOLc8E | III.4.6.3.3 Pruebas y ajustes | 1777366800000 | 4 horas | 0 | 7 | 1.1.1.6.10.3 | Media | 3 | 1.1.1.6.10.3.2 |
| 5mKmaKDSBdv5fsmBztHr | 9iqygviz3AGJnbJOLc8E | IV.1.2.3 Capacitación Key-User (Confirmación de entregas) | 1781694000000 | 2 horas | 0 | 6 | 1.1.2.1.2 | Media | 3 | 1.1.2.1.2.3 |
| 5zMXpKrHJTwLvOVWCIyk | 9iqygviz3AGJnbJOLc8E | III.1.1.18 Ajustar en TEST Liquidación Tarifa - Preliquidación de Pago a Proveedores TMS-ERP para JSON Syncout (#9) | 1767099600000 | 4 horas | 0 | 6 | 1.1.1.3.3 | Media | 3 | 1.1.1.3.3.18 |
| 66mmFmeFbFwycDeW7Fve | 9iqygviz3AGJnbJOLc8E | III.4.2.1.6.1 Configurar proceso SincronizarEstadodeViaje desde Paradas | 1771938000000 | 4 horas | 0 | 8 | 1.1.1.6.3.1.7 | Media | 3 | 1.1.1.6.3.1.7.1 |
| 6FpaA2jgABdl8dlBtoe7 | 9iqygviz3AGJnbJOLc8E | III.1.1.3 Unigis configurar Paradas - Confirmación de Entrega y Cobro TMS-ERP para JSON Syncout (#6) | 1767013200000 | 5 días | 0 | 6 | 1.1.1.3.2 | Media | 3 | 1.1.1.3.2.3 |
| 6RweWLuf29uHYNmPamUO | 9iqygviz3AGJnbJOLc8E | IV.1.2.4 Capacitación Key-User (Tarifas) | 1781701200000 | 0 días | 0 | 6 | 1.1.2.1.2 | Media | 3 | 1.1.2.1.2.4 |
| 6Tv751cIW9PiEVgCZDqC | 9iqygviz3AGJnbJOLc8E | III.4.2.1.1.8.1 Configurar Tabla Z_CodigosPostalesCombinables | 1767877200000 | 1 día | 0 | 9 | 1.1.1.6.3.1.1.8 | Media | 3 | 1.1.1.6.3.1.1.8.2 |
| 6gWDo103ox6L3bbXQBjX | 9iqygviz3AGJnbJOLc8E | III.4.2.1.5.12 Configurar Parametros para App GpsTracker | 1771578000000 | 4 horas | 0 | 8 | 1.1.1.6.3.1.6 | Media | 3 | 1.1.1.6.3.1.6.12 |
| 6hAHwY7TavUgrXQap0Jo | 9iqygviz3AGJnbJOLc8E | III.4.2.1.5.13 Configurar Proceso de validacion en cambio de estado de paradas | 1771592400000 | 4 horas | 0 | 8 | 1.1.1.6.3.1.6 | Media | 3 | 1.1.1.6.3.1.6.13 |
| 73kDbsfDW3l70qCV2dLg | 9iqygviz3AGJnbJOLc8E | III.4.2.1.6.3 Configurar creación y asignacion de ordenes desde Dipatch | 1772024400000 | 2 días | 0 | 8 | 1.1.1.6.3.1.7 | Media | 3 | 1.1.1.6.3.1.7.3 |
| 7DgW0ibXeZh1amqVKw9t | 9iqygviz3AGJnbJOLc8E | III.4.3 Configurar y probar aplicaciones Móviles | 1774357200000 | 2 días | 0 | 5 | 1.1.1.6 | Media | 3 | 1.1.1.6.6 |
| 7LJprXTPaf1iV8Jf7E2p | 9iqygviz3AGJnbJOLc8E | III.1.1.5 Unigis configurar Paradas - Reingreso al Almacén TMS-ERP para JSON Syncout (#8) | 1768222800000 | 5 días | 0 | 6 | 1.1.1.3.2 | Media | 3 | 1.1.1.3.2.5 |
| 7LhXEf2ptJxU2tHqwMql | 9iqygviz3AGJnbJOLc8E | III.1.1.5 Probar en TEST Pedidos - Confirmación y VL MAPI ERP-TMS (#3) | 1766062800000 | 1 día | 0 | 6 | 1.1.1.3.3 | Media | 3 | 1.1.1.3.3.5 |
| 7uY8NPIEZPX9NBtEjtc6 | 9iqygviz3AGJnbJOLc8E | III.4.2.1.5.4.2 Tracking | 1770714000000 | 4 horas | 0 | 9 | 1.1.1.6.3.1.6.4 | Media | 3 | 1.1.1.6.3.1.6.4.2 |
| 84XhKN6mSyqRWXfQZNbP | 9iqygviz3AGJnbJOLc8E | III.4.2.3.3 Europastry probar en TEST transiciones de estados de Paradas | 1770195600000 | 2 días | 0 | 7 | 1.1.1.6.3.3 | Media | 3 | 1.1.1.6.3.3.4 |
| 8ODBvcZoSvOwS6F9Brxn | 9iqygviz3AGJnbJOLc8E | III.4.2.1.1.8.0 Europastry entregar lógica y tabla de CPs combinables | 1767862800000 | 4 horas | 0 | 9 | 1.1.1.6.3.1.1.8 | Media | 3 | 1.1.1.6.3.1.1.8.1 |
| 8XodiruplzAYZtsq6X3P | 9iqygviz3AGJnbJOLc8E | III.4.6 Configurar y probar reportes | 1776776400000 | 20,5 días | 0 | 5 | 1.1.1.6 | Media | 3 | 1.1.1.6.10 |
| 8dUXbwKPD5XaxizalXOB | 9iqygviz3AGJnbJOLc8E | III.4.2.1.5.14 Configurar Proceso de cambio de estado automatico de Viaje | 1771837200000 | 1 día | 0 | 8 | 1.1.1.6.3.1.6 | Media | 3 | 1.1.1.6.3.1.6.14 |
| 8uDzlCbsajyW3V7ikYAw | 9iqygviz3AGJnbJOLc8E | III.2 Desarrollar / configurar interfaces | 1765803600000 | 30 días | 0 | 4 | 1.1.1 | Media | 3 | 1.1.1.3 |
| 8wnVmeb1z7Tk6ry24gRR | 9iqygviz3AGJnbJOLc8E | IV.1.2.1 Capacitación Key-User (planeación) | 1781614800000 | 4 horas | 0 | 6 | 1.1.2.1.2 | Media | 3 | 1.1.2.1.2.1 |
| 8zk2yQHMgUuWCDddNtpo | 9iqygviz3AGJnbJOLc8E | III.1.1.10 Mapear Conductor - Creación ERP-TMS (#10) | 1765962000000 | 1 día | 0 | 6 | 1.1.1.1.1 | Media | 3 | 1.1.1.1.1.10 |
| 9aBpuO5qUAp5u3wwktuy | 9iqygviz3AGJnbJOLc8E | III.1.1.2 Mapear Pedidos - Solicitud Confirmación y preparación - TMS-ERP JSON Syncout (#2) | 1764838800000 | 1 día | 0 | 6 | 1.1.1.1.1 | Media | 3 | 1.1.1.1.1.2 |
| 9e6Ra43V2P9BdQcCBZyI | 9iqygviz3AGJnbJOLc8E | III.4.1.10 UNI configurar y cargar conductores | 1765443600000 | 1 día | 0 | 6 | 1.1.1.6.1 | Media | 3 | 1.1.1.6.1.10 |
| 9mPcBvFmgCMuBest4c4m | 9iqygviz3AGJnbJOLc8E | III.1.1.9 Mapear Liquidación Tarifa - Preliquidación de Pago a Proveedores TMS-ERP JSON Syncout (#9) | 1765875600000 | 1 día | 0 | 6 | 1.1.1.1.1 | Media | 3 | 1.1.1.1.1.9 |
| A1adYCDcw9KHCpfkN6OF | 9iqygviz3AGJnbJOLc8E | Asignación de vehículo y conductor configurado y funcionando | 1774357200000 | 0 días | 0 | 5 | 1.1.1.6 | Media | 3 | 1.1.1.6.5 |
| AP50o49yc76G5w1Ri6f4 | 9iqygviz3AGJnbJOLc8E | III.4.2.4.1 Ajuste de proceso post-importación de Órdenes y Maestros tras pruebas unitarias de cliente | 1773651600000 | 4 horas | 0 | 7 | 1.1.1.6.3.4 | Media | 3 | 1.1.1.6.3.4.1 |
| APXIAev33d1sgFgzn9T2 | 9iqygviz3AGJnbJOLc8E | V.2 Brindar apoyo durante estabilización | 1783422000000 | 16 días | 0 | 4 | 1.1.3 | Media | 3 | 1.1.3.2 |
| AR0rjOMIwNRQ5GFQrjTS | 9iqygviz3AGJnbJOLc8E | III.4.2.1.2.4 Configurar OrdenTipoPedido (Carga, Descarga, Recogidas, Cobros, Click And Collet) | 1767963600000 | 1 día | 0 | 8 | 1.1.1.6.3.1.3 | Media | 3 | 1.1.1.6.3.1.3.4 |
| AcvEuLsjB9Cv5Z1JW8iY | 9iqygviz3AGJnbJOLc8E | III.4.1.17 Europastry compilar datos de documentos de conductores y vehículos (REAT, CARNE, FTV, ATP) | 1766494800000 | 1 día | 0 | 6 | 1.1.1.6.1 | Media | 3 | 1.1.1.6.1.17 |
| AladCMFOdtdppl1GvK68 | 9iqygviz3AGJnbJOLc8E | III.1.1.11 Mapear Vehículo - Creación ERP-TMS (#11) | 1766048400000 | 2 días | 0 | 6 | 1.1.1.1.1 | Media | 3 | 1.1.1.1.1.11 |
| AnSZVzbYyxEwR937BA91 | 9iqygviz3AGJnbJOLc8E | III.4.4.2 Configurar y cargar Grupos y Usuarios | 1779282000000 | 1 día | 0 | 6 | 1.1.1.6.15 | Media | 3 | 1.1.1.6.15.2 |
| AniSaKtwHmZECnRgCv7I | 9iqygviz3AGJnbJOLc8E | III.1.1.8 Mapear Paradas - Reingreso al Almacén TMS-ERP JSON Syncout (#8) | 1765789200000 | 1 día | 0 | 6 | 1.1.1.1.1 | Media | 3 | 1.1.1.1.1.8 |
| BEgINAa5wYdtf9AeI1cD | 9iqygviz3AGJnbJOLc8E | III.4.4.4.2 Configuración en entorno de test | 1774962000000 | 1 día | 0 | 7 | 1.1.1.6.7.5 | Media | 3 | 1.1.1.6.7.5.1 |
| BRfa7Adrx9IwwAsemppU | 9iqygviz3AGJnbJOLc8E | III.4.2.1.1.8 Configurar y probar Adelanto de Preparación | 1767862800000 | 7 días | 0 | 8 | 1.1.1.6.3.1.1 | Media | 3 | 1.1.1.6.3.1.1.8 |
| Beo3oqUCsW2nsuNHT1mo | 9iqygviz3AGJnbJOLc8E | III.1.1.10 Ajustar en TEST Viajes - Envío Paradas preparadas y Doc cobros ERP-TMS MAPI (#5) | 1766494800000 | 4 horas | 0 | 6 | 1.1.1.3.3 | Media | 3 | 1.1.1.3.3.10 |
| Bjvmf5MprvsIyVmfPiyA | 9iqygviz3AGJnbJOLc8E | III.1.1.5 Mapear Viajes - Envío Paradas preparadas y Doc cobros ERP-TMS (crearViajeCompleto7) (#5) | 1765357200000 | 1 día | 0 | 6 | 1.1.1.1.1 | Media | 3 | 1.1.1.1.1.5 |
| BwYCSTcL3fhiXBb0BCMC | 9iqygviz3AGJnbJOLc8E | III.2.1 Desarrollar y Configurar interfaces Unigis | 1765803600000 | 30 días | 0 | 5 | 1.1.1.3 | Media | 3 | 1.1.1.3.2 |
| C92GYb1eggxrxubz6pWw | 9iqygviz3AGJnbJOLc8E | III.4.1.13 Europastry compilar MUESTRA de datos de pedidos e items para UNI | 1765803600000 | 2 días | 0 | 6 | 1.1.1.6.1 | Media | 3 | 1.1.1.6.1.13 |

| id | projectId | title | startDate | durationText | percentComplete | outlineLevel | parentId | priority | tenantId | wbs | description |
| --- | --- | --- | --- | --- | --- | --- | --- | --- | --- | --- | --- |
| CB01hwU8zwCKGcsJq8om | 9iqygviz3AGJnbJOLc8E | III.1.1.8 Ajustar en TEST Viajes - Envío Planificación y Creación TMS-ERP para JSON Syncout (#4) | 1766408400000 | 4 horas | 0 | 6 | 1.1.1.3.3 | Media | 3 | 1.1.1.3.3.8 |  |
| CJ8SpVRaUMag1AXwjRw8 | 9iqygviz3AGJnbJOLc8E | III.1.1.6 Mapear Paradas - Confirmación de Entrega y Cobro TMS-ERP JSON Syncout (#6) | 1765443600000 | 1 día | 0 | 6 | 1.1.1.1.1 | Media | 3 | 1.1.1.1.1.6 |  |
| CTi9W0axX8Evm9leaTai | 9iqygviz3AGJnbJOLc8E | ETAPA III: Construcción | 1764730800000 | 137,5 días | 0 | 3 | 1.1 | Media | 3 | 1.1.1 |  |
| DJy6iX9uvFNWSWoZ3D7v | 9iqygviz3AGJnbJOLc8E | III.4.7.3 Configurar y probar conceptos | 1779210000000 | 0 días | 0 | 6 | 1.1.1.6.12 | Media | 3 | 1.1.1.6.12.3 |  |
| DVcQCqH9Sd2ydSz0oBJg | 9iqygviz3AGJnbJOLc8E | III.4.2.1.1.1 Crear y configurar estados de Pedidos | 1766667600000 | 4 horas | 0 | 8 | 1.1.1.6.3.1.1 | Media | 3 | 1.1.1.6.3.1.1.1 |  |
| DtcWUDkmfBiOllcKATZx | 9iqygviz3AGJnbJOLc8E | Creación de viaje desde ruta configurado y probado | 1772730000000 | 0 días | 0 | 7 | 1.1.1.6.3.1 | Media | 3 | 1.1.1.6.3.1.9 |  |
| DteuuXmvcUNVtwAWbGkW | 9iqygviz3AGJnbJOLc8E | IV.1.2.7 Capacitación Usuarios Finales (Control Logístico) | 1781859600000 | 1 día | 0 | 6 | 1.1.2.1.2 | Media | 3 | 1.1.2.1.2.7 |  |
| EBfbglik0pYbKMzO0cqA | 9iqygviz3AGJnbJOLc8E | III.4.6.4 Nivel de satisfacción del cliente. * | 1777381200000 | 1,5 días | 0 | 6 | 1.1.1.6.10 | Media | 3 | 1.1.1.6.10.4 |  |
| EQjPIIPW2a4DrQrMMmpb | 9iqygviz3AGJnbJOLc8E | III.4.3.3 Europastry realizar pruebas unitarias de instalación y configuración de Unigis Deliveries X | 1774443600000 | 4 horas | 0 | 6 | 1.1.1.6.6 | Media | 3 | 1.1.1.6.6.3 |  |
| EghGDBjN2FuCFMkPyolT | 9iqygviz3AGJnbJOLc8E | III.4.4.9.3 Pruebas y ajustes | 1775826000000 | 4 horas | 0 | 7 | 1.1.1.6.7.9 | Media | 3 | 1.1.1.6.7.9.3 |  |
| EkqwnCi4yMdbUK8TV4GN | 9iqygviz3AGJnbJOLc8E | III.5 Disponibilizar desarrollos requeridos para el proyecto | 1773648000000 | 19 días | 0 | 4 | 1.1.1 | Media | 3 | 1.1.1.7 |  |
| EyXurtJLYP3P9RdTZe1p | 9iqygviz3AGJnbJOLc8E | III.4.2.1.1.3 Configurar TipoPedido | 1766754000000 | 4 horas | 0 | 8 | 1.1.1.6.3.1.1 | Media | 3 | 1.1.1.6.3.1.1.3 |  |
| Eyst4s2RTIFO0JL9vynR | 9iqygviz3AGJnbJOLc8E | III.1.1.11 Probar en TEST Paradas - Confirmación de Entrega y Cobro TMS-ERP para JSON Syncout (#6) | 1766494800000 | 1 día | 0 | 6 | 1.1.1.3.3 | Media | 3 | 1.1.1.3.3.11 |  |
| FI6whxVG6ZhAXdktdzGo | 9iqygviz3AGJnbJOLc8E | III.1.1.11 Europastry configurar Vehículo - Creación ERP-TMS MAPI (#11) | 1767186000000 | 5 días | 0 | 6 | 1.1.1.3.1 | Media | 3 | 1.1.1.3.1.11 |  |
| FLbOtC26pW7bCFIAPLgM | 9iqygviz3AGJnbJOLc8E | III.4.6.3.2 Configuración en entorno de test | 1777280400000 | 1 día | 0 | 7 | 1.1.1.6.10.3 | Media | 3 | 1.1.1.6.10.3.1 |  |
| FcX5ti7W0yGCsY9QJPrh | 9iqygviz3AGJnbJOLc8E | IV.2.1 Elaborar plan de cut over | 1782306000000 | 1 día | 0 | 5 | 1.1.2.2 | Media | 3 | 1.1.2.2.1 |  |
| FgRecMQNGlftV0AqUBnb | 9iqygviz3AGJnbJOLc8E | III.4.2.1.1.7 Generar layout básico en OM - Pedidos | 1767690000000 | 2 días | 0 | 8 | 1.1.1.6.3.1.1 | Media | 3 | 1.1.1.6.3.1.1.7 |  |
| FqT9PNCeNTjFPVFq7NAn | 9iqygviz3AGJnbJOLc8E | III.4.6.3 Porcentaje de entregas a tiempo. | 1777280400000 | 1,5 días | 0 | 6 | 1.1.1.6.10 | Media | 3 | 1.1.1.6.10.3 |  |
| Fz3BpyaxVD1v6zjjPJyR | 9iqygviz3AGJnbJOLc8E | III.4.4.4.2 Configuración en entorno de test | 1775221200000 | 1 día | 0 | 7 | 1.1.1.6.7.7 | Media | 3 | 1.1.1.6.7.7.1 |  |
| GSvGvQYQOpHmheg5gyWC | 9iqygviz3AGJnbJOLc8E | III.4.2.1.1.8.2 Configurar Tabla Z_AdelantosPreparacionOperacion | 1768208400000 | 1 día | 0 | 9 | 1.1.1.6.3.1.1.8 | Media | 3 | 1.1.1.6.3.1.1.8.4 |  |
| GXEWvzCCP20fyt5k21CC | 9iqygviz3AGJnbJOLc8E | III.4.6.6.2 Configuración en entorno de test | 1777640400000 | 1 día | 0 | 7 | 1.1.1.6.10.6 | Media | 3 | 1.1.1.6.10.6.1 |  |
| GcJPqY4Pl6qyMqEtrAce | 9iqygviz3AGJnbJOLc8E | III.4.6.8.3 Pruebas y ajustes | 1778158800000 | 4 horas | 0 | 7 | 1.1.1.6.10.8 | Media | 3 | 1.1.1.6.10.8.2 |  |
| GsM8RbtLqZHM7idvrdt3 | 9iqygviz3AGJnbJOLc8E | III.4.1.11 Europastry Compilar datos de tipos de Pedidos y TiposOrden para UNI | 1765530000000 | 4 horas | 0 | 6 | 1.1.1.6.1 | Media | 3 | 1.1.1.6.1.11 |  |
| GtVCr34avdi3A2abWPsv | 9iqygviz3AGJnbJOLc8E | IV.1.2.2 Capacitación Key-User (Control Logístico) | 1781686800000 | 2 horas | 0 | 6 | 1.1.2.1.2 | Media | 3 | 1.1.2.1.2.2 |  |
| Gzpt0VmrBW9rdWdWBs7f | 9iqygviz3AGJnbJOLc8E | III.4.2.3.1 Europastry probar en TEST transiciones de estados de Pedidos | 1766754000000 | 2 días | 0 | 7 | 1.1.1.6.3.3 | Media | 3 | 1.1.1.6.3.3.1 |  |
| H2SObMSWmp3NnV8b0a4C | 9iqygviz3AGJnbJOLc8E | IV.2.2.1 Preparar información para cargar en TMS | 1782392400000 | 2 días | 0 | 6 | 1.1.2.2.2 | Media | 3 | 1.1.2.2.2.1 |  |
| H8HcxayeV5uBkX5UHfEz | 9iqygviz3AGJnbJOLc8E | III.4.2.1.3.14 Configurar Importacion de Ordenes-Pedidos desde Excel (prueba antes de interfaz) | 1770022800000 | 4 horas | 0 | 8 | 1.1.1.6.3.1.4 | Media | 3 | 1.1.1.6.3.1.4.14 |  |
| HBP4wQYU5itGD4JPaJjZ | 9iqygviz3AGJnbJOLc8E | III.4.2.3 Pruebas unitarias de Workflows (cliente) | 1766754000000 | 55,5 días | 0 | 6 | 1.1.1.6.3 | Media | 3 | 1.1.1.6.3.3 |  |
| HEA4Cit4QNCyLONO5wzh | 9iqygviz3AGJnbJOLc8E | III.1.1.20 Ajustar en TEST Conductor - Creación ERP-TMS MAPI (#10) | 1767272400000 | 4 horas | 0 | 6 | 1.1.1.3.3 | Media | 3 | 1.1.1.3.3.20 |  |
| HnJxCmTitrcPnCiZdtfz | 9iqygviz3AGJnbJOLc8E | III.4.4.4 Configurar Alarma Chofer parado demasiado tiempo en una ubicación (>30') | 1774861200000 | 1,5 días | 0 | 6 | 1.1.1.6.7 | Media | 3 | 1.1.1.6.7.4 |  |
| I9FhSNOdbJ4SaUWtmsHQ | 9iqygviz3AGJnbJOLc8E | III.1.1.14 Ajustar en TEST Viaje - Cierre de Liquidación de Cobros TMS-ERP para JSON Syncout (#7) | 1766667600000 | 4 horas | 0 | 6 | 1.1.1.3.3 | Media | 3 | 1.1.1.3.3.14 |  |
| ICfwUwUzm1XkDcFLKqtk | 9iqygviz3AGJnbJOLc8E | III.3.1.1 Acordar documentación de módulo de Gestión de Cobranzas | 1765803600000 | 4 horas | 0 | 6 | 1.1.1.5.1 | Media | 3 | 1.1.1.5.1.1 |  |
| IfI00D5GA3dqkYM2A8OR | 9iqygviz3AGJnbJOLc8E | III.4.2.1.3.9 Configurar proceso Pre ruteo automatico para actualizar Tipos de Vehiculos | 1769504400000 | 4 horas | 0 | 8 | 1.1.1.6.3.1.4 | Media | 3 | 1.1.1.6.3.1.4.9 |  |
| IkfS2LjxPPer90ZhmZn5 | 9iqygviz3AGJnbJOLc8E | III.4.2.1.3.1 Crear y configurar estados de Rutas | 1768554000000 | 4 horas | 0 | 8 | 1.1.1.6.3.1.4 | Media | 3 | 1.1.1.6.3.1.4.1 |  |
| IuIADk7zQlhwbvlKuJX5 | 9iqygviz3AGJnbJOLc8E | III.4.1.4 UNI configurar y cargar DomicilioOrden (horarios, geolocalización y restricciones) | 1765184400000 | 1 día | 0 | 6 | 1.1.1.6.1 | Media | 3 | 1.1.1.6.1.4 |  |
| JBSyi0KhtCYFPzCqkYrs | 9iqygviz3AGJnbJOLc8E | III.4.2.1.3.6 Configuración de Escenario de Ruteo | 1768914000000 | 2 días | 0 | 8 | 1.1.1.6.3.1.4 | Media | 3 | 1.1.1.6.3.1.4.5 |  |
| JFmYZ6LLiB2zXw1tOZIe | 9iqygviz3AGJnbJOLc8E | IV.2.2.7 Ejecutar acciones de cut over de Europastry | 1782990000000 | 2 días | 0 | 6 | 1.1.2.2.2 | Media | 3 | 1.1.2.2.2.7 |  |
| JSczEbZBOs5e1I74nBPi | 9iqygviz3AGJnbJOLc8E | III.1.1.19 Probar en TEST Conductor - Creación ERP-TMS MAPI (#10) | 1767186000000 | 1 día | 0 | 6 | 1.1.1.3.3 | Media | 3 | 1.1.1.3.3.19 |  |
| JeHZwS7Mbd025v62vZhW | 9iqygviz3AGJnbJOLc8E | III.1.1.15 Probar en TEST Paradas - Reingreso al Almacén TMS-ERP para JSON Syncout (#8) | 1766667600000 | 1 día | 0 | 6 | 1.1.1.3.3 | Media | 3 | 1.1.1.3.3.15 |  |
| K9qt6Pv9ir02w0v5kJ5h | 9iqygviz3AGJnbJOLc8E | III.4.2.4.7 Ajuste de proceso pre Ruteo Automático tras pruebas unitarias de cliente | 1773910800000 | 4 horas | 0 | 7 | 1.1.1.6.3.4 | Media | 3 | 1.1.1.6.3.4.7 |  |
| KCk4ozGsAiBvWFpfj0LE | 9iqygviz3AGJnbJOLc8E | III.1.1.16 Ajustar en TEST Paradas - Reingreso al Almacén TMS-ERP para JSON Syncout (#8) | 1766754000000 | 4 horas | 0 | 6 | 1.1.1.3.3 | Media | 3 | 1.1.1.3.3.16 |  |
| KDzv8fvfk0PlNCiqubZk | 9iqygviz3AGJnbJOLc8E | III.4.2.1.2.8 Configurar Geomaper | 1768482000000 | 4 horas | 0 | 8 | 1.1.1.6.3.1.3 | Media | 3 | 1.1.1.6.3.1.3.7 |  |
| KKOdl0jc5eNIoGX6ffRw | 9iqygviz3AGJnbJOLc8E | III.4.2.3.3 Europastry probar en TEST transiciones de estados de Rutas | 1770037200000 | 2 días | 0 | 7 | 1.1.1.6.3.3 | Media | 3 | 1.1.1.6.3.3.3 |  |
| KeYtFlX2CkaxOZNviQ7c | 9iqygviz3AGJnbJOLc8E | III.5.2.4 Ajustar cobranzas v2 tras pruebas Europastry en TEST | 1775034000000 | 7 días | 0 | 6 | 1.1.1.7.2 | Media | 3 | 1.1.1.7.2.4 |  |
| KkJGxwfdIvHJvUk5tLMv | 9iqygviz3AGJnbJOLc8E | III.4.2.4.13 Ajuste de proceso Creación de Rendición en Almacén tras pruebas unitarias de cliente | 1774342800000 | 4 horas | 0 | 7 | 1.1.1.6.3.4 | Media | 3 | 1.1.1.6.3.4.13 |  |
| KlvxdhSIjX4VCtCEfujG | 9iqygviz3AGJnbJOLc8E | III.4.2.1.1.5 Configurar proceso Validacion de Pedidos | 1767171600000 | 2 días | 0 | 8 | 1.1.1.6.3.1.1 | Media | 3 | 1.1.1.6.3.1.1.5 |  |
| Krc1zTsA4ALUUYzLvmiD | 9iqygviz3AGJnbJOLc8E | III.4.4.10.2 Configurar HTML y logica de envio en ReporteNotificación | 1776157200000 | 1 día | 0 | 7 | 1.1.1.6.7.10 | Media | 3 | 1.1.1.6.7.10.2 |  |
| KymHmHyAPBhzAaDbqfEE | 9iqygviz3AGJnbJOLc8E | III.4.2.1.5.9 Configurar Flujo de Estado y transición de Parada | 1771246800000 | 1 día | 0 | 8 | 1.1.1.6.3.1.6 | Media | 3 | 1.1.1.6.3.1.6.9 |  |
| LQ878w2CyTB3FOexOBPk | 9iqygviz3AGJnbJOLc8E | Reportes y dashboard configurados y validados | 1779210000000 | 0 días | 0 | 5 | 1.1.1.6 | Media | 3 | 1.1.1.6.11 |  |
| LQjqIcGcf44z1GWk6x20 | 9iqygviz3AGJnbJOLc8E | III.3.1.3 Acordar documentación de hoja de viaje | 1765890000000 | 4 horas | 0 | 6 | 1.1.1.5.1 | Media | 3 | 1.1.1.5.1.3 | Completar mapeo de archivo y probar HTML en reporte o generar requerimiento a DEV. Se genera Documento de requerimiento a DEV |
| Lc2wLEqvbV2HweZloy9t | 9iqygviz3AGJnbJOLc8E | III.4.4.9.2 Configurar HTML y logica de envio en ReporteNotificación | 1775739600000 | 1 día | 0 | 7 | 1.1.1.6.7.9 | Media | 3 | 1.1.1.6.7.9.2 |  |
| LcCQLeHyOn7qByYim4lS | 9iqygviz3AGJnbJOLc8E | III.4.8 Configurar y realizar pruebas unitarias de grupos de usuarios y permisos | 1779267600000 | 2,5 días | 0 | 5 | 1.1.1.6 | Media | 3 | 1.1.1.6.15 |  |
| Lm4ki5toVZeZmFGDTlXI | 9iqygviz3AGJnbJOLc8E | III.4.6.4.2 Configuración en entorno de test | 1777381200000 | 1 día | 0 | 7 | 1.1.1.6.10.4 | Media | 3 | 1.1.1.6.10.4.1 |  |
| LvmTn99RVSsrmntRJmtg | 9iqygviz3AGJnbJOLc8E | III.4.3.2 Configurar y probar Unigis GPS Tracker | 1774429200000 | 4 horas | 0 | 6 | 1.1.1.6.6 | Media | 3 | 1.1.1.6.6.2 |  |
| M26rvqR1PpC0RNmEGx6y | 9iqygviz3AGJnbJOLc8E | III.1.1.7 Probar en TEST Viajes - Envío Planificación y Creación TMS-ERP para JSON Syncout (#4) | 1766149200000 | 1 día | 0 | 6 | 1.1.1.3.3 | Media | 3 | 1.1.1.3.3.7 |  |
| M7VUVPHVgZKt7HWD1LGL | 9iqygviz3AGJnbJOLc8E | III.4.1.7 Europastry Compilar datos de tipos de vehículos para UNI (vehículos, dimensiones, horarios y restricciones) | 1765270800000 | 4 horas | 0 | 6 | 1.1.1.6.1 | Media | 3 | 1.1.1.6.1.7 |  |
| M8MSeFhAwctuyVFoytH8 | 9iqygviz3AGJnbJOLc8E | III.1.1.7 Mapear Viaje - Cierre de Liquidación de Cobros TMS-ERP JSON Syncout (#7) | 1765530000000 | 1 día | 0 | 6 | 1.1.1.1.1 | Media | 3 | 1.1.1.1.1.7 |  |
| MQMEw62zconhmWvkVhRS | 9iqygviz3AGJnbJOLc8E | IV.1.2 Dictar capacitación | 1781614800000 | 5,5 días | 0 | 5 | 1.1.2.1 | Media | 3 | 1.1.2.1.2 |  |
| MTxb66yQkLpGErW1txiA | 9iqygviz3AGJnbJOLc8E | III.3.1.2 Acordar documentación de módulo de Disponibilidad de Vehículos - ROADMAP A DEFINIR Y COTIZAR | 1765875600000 | 4 horas | 0 | 6 | 1.1.1.5.1 | Media | 3 | 1.1.1.5.1.2 |  |
| MjYs24Sg7WCCM0Nkboab | 9iqygviz3AGJnbJOLc8E | III.4.4.4.1 Configuración en entorno de test | 1774861200000 | 1 día | 0 | 7 | 1.1.1.6.7.4 | Media | 3 | 1.1.1.6.7.4.1 |  |
| MuWgwG7akvXRZ8XkGqnE | 9iqygviz3AGJnbJOLc8E | III.4.4.4.2 Configuración en entorno de test | 1775552400000 | 1 día | 0 | 7 | 1.1.1.6.7.8 | Media | 3 | 1.1.1.6.7.8.1 |  |
| NTdIa7PIknG6w36ftzmg | 9iqygviz3AGJnbJOLc8E | III.4.2.1.5.8 Configurar Motivos | 1771232400000 | 4 horas | 0 | 8 | 1.1.1.6.3.1.6 | Media | 3 | 1.1.1.6.3.1.6.8 |  |
| NynEHtuPF0jR17wcoWT6 | 9iqygviz3AGJnbJOLc8E | III.4.4.1 Europastry compilar y enviar lista de Grupos y Usuarios | 1779267600000 | 4 horas | 0 | 6 | 1.1.1.6.15 | Media | 3 | 1.1.1.6.15.1 |  |
| OH0ahxr7EVdSGxebG7fy | 9iqygviz3AGJnbJOLc8E | III.4.2.1.3.7 Configurar Tabla Z_AsignacionVehiculoConductor | 1769158800000 | 1 día | 0 | 8 | 1.1.1.6.3.1.4 | Media | 3 | 1.1.1.6.3.1.4.7 |  |
| OjlzRmpQkQtW3HiY4Aup | 9iqygviz3AGJnbJOLc8E | III.2.4 Realizar pruebas unitarias interfaces | 1765890000000 | 17,5 días | 0 | 5 | 1.1.1.3 | Media | 3 | 1.1.1.3.3 |  |
| OpguJohVV5ITGVflVD6x | 9iqygviz3AGJnbJOLc8E | Mapeo de interfaces documentado y validado con Europastry | 1765803600000 | 0 días | 0 | 4 | 1.1.1 | Media | 3 | 1.1.1.2 |  |
| OxAf0GcC5V7GjCs0gnn1 | 9iqygviz3AGJnbJOLc8E | III.4.1.14 UNI configurar y cargar pedidos e items | 1765976400000 | 1 día | 0 | 6 | 1.1.1.6.1 | Media | 3 | 1.1.1.6.1.14 |  |
| P2TuF9mDCx2l8gdKSrPh | 9iqygviz3AGJnbJOLc8E | III.4.6.5.2 Configuración en entorno de test | 1777539600000 | 1 día | 0 | 7 | 1.1.1.6.10.5 | Media | 3 | 1.1.1.6.10.5.1 |  |
| P6nXY6vnEH3BSSq1cLAR | 9iqygviz3AGJnbJOLc8E | III.4.4.10.3 Pruebas y ajustes | 1776243600000 | 4 horas | 0 | 7 | 1.1.1.6.7.10 | Media | 3 | 1.1.1.6.7.10.3 |  |
| P7CgptohvV0K3aeCZoaL | 9iqygviz3AGJnbJOLc8E | HITO Datos maestros básicos cargados | 1766667600000 | 0 días | 0 | 5 | 1.1.1.6 | Media | 3 | 1.1.1.6.2 |  |

| id | projectId | title | startDate | durationText | percentComplete | outlineLevel | parentId | priority | tenantId | wbs | description |
| --- | --- | --- | --- | --- | --- | --- | --- | --- | --- | --- | --- |
| QITZRR1Y03tBTBk1MnZy | 9iqygviz3AGJnbJOLc8E | III.1.1.1 Unigis configurar Pedidos - Solicitud Confirmación y preparación - TMS-ERP para JSON Syncout (#2) | 1765803600000 | 5 días | 0 | 6 | 1.1.1.3.2 | Media | 3 | 1.1.1.3.2.1 |  |
| QKk5XnrDJR6byxBHgrfG | 9iqygviz3AGJnbJOLc8E | III.4.6.10.3 Pruebas y ajustes | 1778590800000 | 4 horas | 0 | 7 | 1.1.1.6.10.10 | Media | 3 | 1.1.1.6.10.10.2 |  |
| QWZKPHLbv8MGcSK0MwrX | 9iqygviz3AGJnbJOLc8E | III.4.2.1.2.3 Configurar TipoOrden | 1767949200000 | 4 horas | 0 | 8 | 1.1.1.6.3.1.3 | Media | 3 | 1.1.1.6.3.1.3.3 |  |
| QaoEVgtmX7q4EvScDBPx | 9iqygviz3AGJnbJOLc8E | III.4.4.4.3 Pruebas y ajustes | 1775638800000 | 4 horas | 0 | 7 | 1.1.1.6.7.8 | Media | 3 | 1.1.1.6.7.8.2 |  |
| Qm1dkLKGCn9apwPGEjgs | 9iqygviz3AGJnbJOLc8E | III.1.1.3 Probar en TEST Pedidos - Solicitud Confirmación y preparación - TMS-ERP para JSON Syncout (#2) | 1766408400000 | 1 día | 0 | 6 | 1.1.1.3.3 | Media | 3 | 1.1.1.3.3.3 |  |
| Qm32LvOdBg9EGKRjHfmJ | 9iqygviz3AGJnbJOLc8E | III.4.7.5 Configurar y probar flujos de estados de incidencias | 1779210000000 | 0 días | 0 | 6 | 1.1.1.6.12 | Media | 3 | 1.1.1.6.12.5 |  |
| QwS8EdGjbqceWx6BvPD7 | 9iqygviz3AGJnbJOLc8E | III.4.2.1.3 Configurar y probar Planificación | 1768554000000 | 12,5 días | 0 | 7 | 1.1.1.6.3.1 | Media | 3 | 1.1.1.6.3.1.4 |  |
| R6XuKeMaMdmFEaUCSkSh | 9iqygviz3AGJnbJOLc8E | III.4.2.1.1.8.3a Europastry entregar lógica y tabla de adelantos por operación | 1768294800000 | 1 día | 0 | 9 | 1.1.1.6.3.1.1.8 | Media | 3 | 1.1.1.6.3.1.1.8.5 |  |
| RcPTs6bl8Bui3LPrDCvu | 9iqygviz3AGJnbJOLc8E | III.1.3 Acordar el documento final de mapeo de interfaces | 1765544400000 | 1 día | 0 | 5 | 1.1.1.1 | Media | 3 | 1.1.1.1.3 |  |
| RyAmqB5tJ9ufocgkDwAh | 9iqygviz3AGJnbJOLc8E | III.4.4.9 Configurar Reporte Notificacion de Documentos Vencidos y por Vencer | 1775653200000 | 2,5 días | 0 | 6 | 1.1.1.6.7 | Media | 3 | 1.1.1.6.7.9 |  |
| SAB8WiAxXhlrzHSCCtfd | 9iqygviz3AGJnbJOLc8E | III.4.2.1.6.5 Configurar Tipos de incidencias y configuracion por Grupo de Usuarios | 1772542800000 | 4 horas | 0 | 8 | 1.1.1.6.3.1.7 | Media | 3 | 1.1.1.6.3.1.7.5 |  |
| SfcJo4XKvWdcidYg87he | 9iqygviz3AGJnbJOLc8E | III.4.6.9.3 Pruebas y ajustes | 1778490000000 | 4 horas | 0 | 7 | 1.1.1.6.10.9 | Media | 3 | 1.1.1.6.10.9.2 |  |
| SvOErmMkHM0Nc6opC1tf | 9iqygviz3AGJnbJOLc8E | III.4 Configurar la solución y realizar pruebas unitarias | 1764730800000 | 122,5 días | 0 | 4 | 1.1.1 | Media | 3 | 1.1.1.6 |  |
| T8JkZwFnwtPedEVuC7zK | 9iqygviz3AGJnbJOLc8E | IV.2.2 Ejecutar plan de cut over | 1782392400000 | 6,75 días | 0 | 5 | 1.1.2.2 | Media | 3 | 1.1.2.2.2 |  |
| TPgKF3GMkXQmjtG1yztK | 9iqygviz3AGJnbJOLc8E | IV.2 Planificar y ejecutar pase a producción | 1782306000000 | 7,75 días | 0 | 4 | 1.1.2 | Media | 3 | 1.1.2.2 |  |
| TxDqcL0liSp1p2lYawbc | 9iqygviz3AGJnbJOLc8E | III.1.1.6 Ajustar en TEST Pedidos - Confirmación y VL MAPI ERP-TMS (#3) | 1766149200000 | 4 horas | 0 | 6 | 1.1.1.3.3 | Media | 3 | 1.1.1.3.3.6 |  |
| TxNAu4GTydXtoP0mucVK | 9iqygviz3AGJnbJOLc8E | III.4.6.8 Porcentaje de cobranzas realizadas en tiempo. | 1778072400000 | 1,5 días | 0 | 6 | 1.1.1.6.10 | Media | 3 | 1.1.1.6.10.8 |  |
| U8DUnYCjW3RR25JuFPfd | 9iqygviz3AGJnbJOLc8E | III.4.2 Configurar y probar flujos logísticos | 1766667600000 | 63 días | 0 | 5 | 1.1.1.6 | Media | 3 | 1.1.1.6.3 |  |
| UDf2cuYp9OPEqMNt1tOR | 9iqygviz3AGJnbJOLc8E | III.4.2.1.5.10 Configurar Flujo de Estado de Viajes | 1771333200000 | 4 horas | 0 | 8 | 1.1.1.6.3.1.6 | Media | 3 | 1.1.1.6.3.1.6.10 |  |
| UFfNJfml6AmVtJgWiZzL | 9iqygviz3AGJnbJOLc8E | III.7.1 Preparar datos maestros y casos de prueba | 1780405200000 | 3 días | 0 | 5 | 1.1.1.9 | Media | 3 | 1.1.1.9.1 |  |
| UOMwQXsGJrL9cdmdbOh5 | 9iqygviz3AGJnbJOLc8E | III.4.2.1.6 Preparación y Actualización de Viaje | 1771938000000 | 7,5 días | 0 | 7 | 1.1.1.6.3.1 | Media | 3 | 1.1.1.6.3.1.7 |  |
| V6qyor6SBx3gEmDMVAgg | 9iqygviz3AGJnbJOLc8E | III.1.1.4 Mapear Viajes - Envío Planificación y Creación TMS-ERP JSON Syncout (#4) | 1765184400000 | 2 días | 0 | 6 | 1.1.1.1.1 | Media | 3 | 1.1.1.1.1.4 | Unigis planifica y envia Viaje con estructura compartida por EUP |
| VUJO4LMvH2n44OMVbtat | 9iqygviz3AGJnbJOLc8E | III.4.2.1.6.2 Configurar confirmación de cargas y entregas parciales Cantidad-Motivos | 1772010000000 | 4 horas | 0 | 8 | 1.1.1.6.3.1.7 | Media | 3 | 1.1.1.6.3.1.7.2 |  |
| W3SQtC5YueSDTN9qf0Rg | 9iqygviz3AGJnbJOLc8E | III.4.1.8 UNI configurar y cargar tipos de vehículos (vehículos, dimensiones, horarios y restricciones) | 1765285200000 | 1 día | 0 | 6 | 1.1.1.6.1 | Media | 3 | 1.1.1.6.1.8 |  |
| WWnzGhU7lNaFgD6IMPmQ | 9iqygviz3AGJnbJOLc8E | III.4.2.2 Configurar y realizar pruebas unitarias OM básico | 1772787600000 | 1 día | 0 | 6 | 1.1.1.6.3 | Media | 3 | 1.1.1.6.3.2 |  |
| WXuGfDLhZah8hQdFrAxp | 9iqygviz3AGJnbJOLc8E | Generación automática de Guías de Pago a Provedores configurada y probada | 1779210000000 | 0 días | 0 | 5 | 1.1.1.6 | Media | 3 | 1.1.1.6.13 |  |
| Wg1XHcN4T9NatLQv58Ua | 9iqygviz3AGJnbJOLc8E | III.4.4 Configurar y probar alarmas, notificaciones | 1774530000000 | 18 días | 0 | 5 | 1.1.1.6 | Media | 3 | 1.1.1.6.7 |  |
| Wkp6b13wIPa09CKpg9V6 | 9iqygviz3AGJnbJOLc8E | III.1.1.2 Ajustar en TEST Pedidos - Creación, Modificación y Anulación MAPI ERP-TMS (#1) | 1765976400000 | 4 horas | 0 | 6 | 1.1.1.3.3 | Media | 3 | 1.1.1.3.3.2 |  |
| Wo8xaTZTduHWtTaL8xhS | 9iqygviz3AGJnbJOLc8E | Control de carga y Entrega configurado y probado | 1772730000000 | 0 días | 0 | 7 | 1.1.1.6.3.1 | Media | 3 | 1.1.1.6.3.1.8 |  |
| X0pjkr4XlwcQlQEyJ283 | 9iqygviz3AGJnbJOLc8E | V.3 Generar documento de pasaje a soporte | 1785322800000 | 10 días | 0 | 4 | 1.1.3 | Media | 3 | 1.1.3.3 |  |
| X5CZrZaRfDXrZLnTQXwE | 9iqygviz3AGJnbJOLc8E | III.1.1.2 Unigis configurar Viajes - Envío Planificación y Creación TMS-ERP para JSON Syncout (#4) | 1766408400000 | 5 días | 0 | 6 | 1.1.1.3.2 | Media | 3 | 1.1.1.3.2.2 |  |
| XjQYEbc8PLuEMdaLGxgD | 9iqygviz3AGJnbJOLc8E | III.1.1.10 Europastry configurar Conductor - Creación ERP-TMS MAPI (#10) | 1767013200000 | 2 días | 0 | 6 | 1.1.1.3.1 | Media | 3 | 1.1.1.3.1.10 |  |
| Y4zbaUDIAponv4icpEG8 | 9iqygviz3AGJnbJOLc8E | III.4.2.1.1.6 Configurar proceso al editar Pedidos en OM | 1767344400000 | 2 días | 0 | 8 | 1.1.1.6.3.1.1 | Media | 3 | 1.1.1.6.3.1.1.6 |  |
| ZS8H2PJ6d1AoUh3JGAT2 | 9iqygviz3AGJnbJOLc8E | III.4.2.4.9 Ajuste de proceso pre Validación en Cambio de Estado de Rutas tras pruebas unitarias de cliente | 1773997200000 | 4 horas | 0 | 7 | 1.1.1.6.3.4 | Media | 3 | 1.1.1.6.3.4.9 |  |
| ZaAhZYTxRIS1wwoxSLXq | 9iqygviz3AGJnbJOLc8E | III.4.3.4 Europastry realizar pruebas unitarias de instalación y configuración de GPS Tracker | 1774515600000 | 4 horas | 0 | 6 | 1.1.1.6.6 | Media | 3 | 1.1.1.6.6.4 |  |
| ZprM55puDBfkvzt9N3XY | 9iqygviz3AGJnbJOLc8E | III.4.5 Configurar y probar portal B2C | 1764730800000 | 0 días | 0 | 5 | 1.1.1.6 | Media | 3 | 1.1.1.6.9 |  |
| ZrxqjlacXU9xaco6pYt5 | 9iqygviz3AGJnbJOLc8E | III.1.1.8 Europastry desarrollar end-point Paradas - Reingreso al Almacén TMS-ERP para JSON Syncout (#8) | 1766581200000 | 1 día | 0 | 6 | 1.1.1.3.1 | Media | 3 | 1.1.1.3.1.8 |  |
| ZvqkCfe3wHb53yWOgwsK | 9iqygviz3AGJnbJOLc8E | Generación de Liquidación de pago a Proveedores configurada y probada | 1779210000000 | 0 días | 0 | 5 | 1.1.1.6 | Media | 3 | 1.1.1.6.14 |  |
| ZxzzT8OmmIsZj8Uo96zQ | 9iqygviz3AGJnbJOLc8E | III.4.6.7.2 Configuración en entorno de test | 1777971600000 | 1 día | 0 | 7 | 1.1.1.6.10.7 | Media | 3 | 1.1.1.6.10.7.1 |  |
| a5MWOO6WQpnolsZ1RBFH | 9iqygviz3AGJnbJOLc8E | III.1.1.6 Europastry desarrollar end-point Paradas - Confirmación de Entrega y Cobro TMS-ERP para JSON Syncout (#6) | 1766408400000 | 1 día | 0 | 6 | 1.1.1.3.1 | Media | 3 | 1.1.1.3.1.6 |  |
| aKUHd8HjPkSSL4KnD2mE | 9iqygviz3AGJnbJOLc8E | III.4.6.6.3 Pruebas y ajustes | 1777899600000 | 4 horas | 0 | 7 | 1.1.1.6.10.6 | Media | 3 | 1.1.1.6.10.6.2 |  |
| aM2mydOjAkB0QSViP0ug | 9iqygviz3AGJnbJOLc8E | III.4.1.12 UNI configurar y cargar tipos de Pedidos, y TiposOrden | 1765544400000 | 1 día | 0 | 6 | 1.1.1.6.1 | Media | 3 | 1.1.1.6.1.12 |  |
| aXzFwPIGaoeo3qV1p1OH | 9iqygviz3AGJnbJOLc8E | IV.1.2.6 Capacitación Usuarios Finales (Planeación) | 1781773200000 | 1 día | 0 | 6 | 1.1.2.1.2 | Media | 3 | 1.1.2.1.2.6 |  |
| adbh3xkYVVZrO3kyrpkH | 9iqygviz3AGJnbJOLc8E | III.4.6.11 Europastry realizar pruebas unitarias de reportes en TEST | 1778662800000 | 3 días | 0 | 6 | 1.1.1.6.10 | Media | 3 | 1.1.1.6.10.11 |  |
| alUd2MDn1DfqcytCvfMn | 9iqygviz3AGJnbJOLc8E | III.1.1.4 Unigis configurar Viaje - Cierre de Liquidación de Cobros TMS-ERP para JSON Syncout (#7) | 1767618000000 | 5 días | 0 | 6 | 1.1.1.3.2 | Media | 3 | 1.1.1.3.2.4 |  |
| azshnrpa2IcACJGKrJF3 | 9iqygviz3AGJnbJOLc8E | III.4.2.4.8 Ajuste de proceso post Ruteo Automático tras pruebas unitarias de cliente | 1773925200000 | 4 horas | 0 | 7 | 1.1.1.6.3.4 | Media | 3 | 1.1.1.6.3.4.8 |  |
| bA1vrP2EbaH31dUciPWA | 9iqygviz3AGJnbJOLc8E | III.4.4.4.2 Configuración en entorno de test | 1775120400000 | 1 día | 0 | 7 | 1.1.1.6.7.6 | Media | 3 | 1.1.1.6.7.6.1 |  |
| bDjNBF6UWDPiOmMVtSy8 | 9iqygviz3AGJnbJOLc8E | Interfaces desarrolladas y probadas | 1767891600000 | 0 días | 0 | 4 | 1.1.1 | Media | 3 | 1.1.1.4 |  |
| bZP7JfkAvT4TvJvaNDOS | 9iqygviz3AGJnbJOLc8E | III.4.2.1.5 Crear y configurar estados de Paradas | 1770123600000 | 4 horas | 0 | 8 | 1.1.1.6.3.1.5 | Media | 3 | 1.1.1.6.3.1.5.1 |  |
| bcP0tM723E8TS2jMyCNw | 9iqygviz3AGJnbJOLc8E | III.4.2.1.6.7 Configurar proceso de creación de parada de Rendición en Almacén | 1772701200000 | 1 día | 0 | 8 | 1.1.1.6.3.1.7 | Media | 3 | 1.1.1.6.3.1.7.7 |  |
| bmvWHYsGBRe8n38GYq14 | 9iqygviz3AGJnbJOLc8E | III.4.2.1.1.8.3 Configurar clasificación de Clientes Combinables | 1768381200000 | 1 día | 0 | 9 | 1.1.1.6.3.1.1.8 | Media | 3 | 1.1.1.6.3.1.1.8.6 |  |
| boPLqJzq1qGcooqbybIx | 9iqygviz3AGJnbJOLc8E | III.4.2.1.1.8.2a Europastry entregar lógica y tabla de adelantos por operación | 1767963600000 | 4 horas | 0 | 9 | 1.1.1.6.3.1.1.8 | Media | 3 | 1.1.1.6.3.1.1.8.3 |  |
| c4k9uTwIjynXpTQpXwCs | 9iqygviz3AGJnbJOLc8E | III.4.2.4.10 Ajuste de proceso post Creación Viajes y Paradas tras pruebas unitarias de cliente | 1774011600000 | 4 horas | 0 | 7 | 1.1.1.6.3.4 | Media | 3 | 1.1.1.6.3.4.10 |  |
| c6zxez9IVza1TKyQhah0 | 9iqygviz3AGJnbJOLc8E | III.4.2.1.5.3 Configurar proceso de creación de viaje Post cambio Estado de Ruta a Confirmado | 1770296400000 | 4 horas | 0 | 8 | 1.1.1.6.3.1.6 | Media | 3 | 1.1.1.6.3.1.6.3 |  |
| c8255CYTsvH3UACzNmy7 | 9iqygviz3AGJnbJOLc8E | III.1.1.21 Probar en TEST Vehículo - Creación ERP-TMS MAPI (#11) | 1767790800000 | 1 día | 0 | 6 | 1.1.1.3.3 | Media | 3 | 1.1.1.3.3.21 |  |
| cIy23jm64uX6sWAjPX66 | 9iqygviz3AGJnbJOLc8E | V.1. Go Live | 1783335600000 | 1 día | 0 | 4 | 1.1.3 | Media | 3 | 1.1.3.1 |  |
| cZrjuGJ1GIiWtuv473nS | 9iqygviz3AGJnbJOLc8E | III.5.1 Liberar REQs desarrollo | 1773648000000 | 0 días | 0 | 5 | 1.1.1.7 | Media | 3 | 1.1.1.7.1 |  |
| d7WqYfoFrnW6Hwsw2PaH | 9iqygviz3AGJnbJOLc8E | III.1 interfaces | 1764752400000 | 13 días | 0 | 4 | 1.1.1 | Media | 3 | 1.1.1.1 |  |
| dB41JHARakFAci0kKYZd | 9iqygviz3AGJnbJOLc8E | III.4.3.1 Configurar y probar Unigis Deliveries X | 1774357200000 | 4 horas | 0 | 6 | 1.1.1.6.6 | Media | 3 | 1.1.1.6.6.1 |  |
| dFaFol0plQxTwXlLaQLD | 9iqygviz3AGJnbJOLc8E | III.3.1 Completar formatos de requerimientos de desarrollo (REQs) | 1765803600000 | 2,5 días | 0 | 5 | 1.1.1.5 | Media | 3 | 1.1.1.5.1 |  |
| dG43GU2XlScNgYYWtDNB | 9iqygviz3AGJnbJOLc8E | IV.1.2.8 Capacitación Usuarios Finales (Tarifas) | 1782205200000 | 1 día | 0 | 6 | 1.1.2.1.2 | Media | 3 | 1.1.2.1.2.9 |  |
| dJm9ozQ9UKJ7Z7SGKEPV | 9iqygviz3AGJnbJOLc8E | III.4.6.1 Europastry compartir lista y especificación de reportes y sus formatos | 1776776400000 | 2 días | 0 | 6 | 1.1.1.6.10 | Media | 3 | 1.1.1.6.10.1 |  |
| drpUt1ViDOXR3JLUbnhP | 9iqygviz3AGJnbJOLc8E | III.4.2.1.1.8.4 Configurar proceso de Adelantos de preparación | 1768467600000 | 2 días | 0 | 9 | 1.1.1.6.3.1.1.8 | Media | 3 | 1.1.1.6.3.1.1.8.7 |  |
| dshMiMB7p4r9Ro8NNsdZ | 9iqygviz3AGJnbJOLc8E | III.1.1.22 Ajustar en TEST Vehículo - Creación ERP-TMS MAPI (#11) | 1767877200000 | 4 horas | 0 | 6 | 1.1.1.3.3 | Media | 3 | 1.1.1.3.3.22 |  |
| dtEwsKpsJfOEd6aJpRSL | 9iqygviz3AGJnbJOLc8E | III.4.2.1.3.7a Europastry compilar lógica y tabla de asignación vehiculo conductor | 1769086800000 | 4 horas | 0 | 8 | 1.1.1.6.3.1.4 | Media | 3 | 1.1.1.6.3.1.4.6 |  |
| dtomWtxgjhT2E4dzF7ji | 9iqygviz3AGJnbJOLc8E | III.4.2.1.5.2 Crear y configurar transiciones de estados de Viajes | 1770282000000 | 4 horas | 0 | 8 | 1.1.1.6.3.1.6 | Media | 3 | 1.1.1.6.3.1.6.2 |  |
| eJUW0eViBx1zqwLhljG6 | 9iqygviz3AGJnbJOLc8E | III.4.1.15 Europastry compilar datos de zonas geográficas para UNI | 1766062800000 | 1 día | 0 | 6 | 1.1.1.6.1 | Media | 3 | 1.1.1.6.1.15 |  |
| eNDKVywbbwbPUSJG3iOa | 9iqygviz3AGJnbJOLc8E | III.4.2.1.6.4 Configurar cobro en confirmación entregas con Mobile - estándar | 1772197200000 | 2 días | 0 | 8 | 1.1.1.6.3.1.7 | Media | 3 | 1.1.1.6.3.1.7.4 |  |
| eXb2qqX1jTrxRGTL240Y | 9iqygviz3AGJnbJOLc8E | III.4.6.2 Tiempo promedio de entrega por ruta. | 1776949200000 | 1,5 días | 0 | 6 | 1.1.1.6.10 | Media | 3 | 1.1.1.6.10.2 |  |
| eXmFt4CwzrteycYQWUAB | 9iqygviz3AGJnbJOLc8E | IV.1 Capacitar a usuarios finales y realizar pruebas UAT | 1781269200000 | 8 días | 0 | 4 | 1.1.2 | Media | 3 | 1.1.2.1 |  |

| id | projectId | title | startDate | durationText | percentComplete | outlineLevel | parentId | priority | tenantId | wbs | description |
| --- | --- | --- | --- | --- | --- | --- | --- | --- | --- | --- | --- |
| eYgMEBsRpa1HKOAMFyPx | 9iqygviz3AGJnbJOLc8E | III.4.4.10.1 Configurar Reporte Documentos Rechazado | 1776070800000 | 1 día | 0 | 7 | 1.1.1.6.7.10 | Media | 3 | 1.1.1.6.7.10.1 |  |
| eZFUFS6OR1fS8Z72tYbd | 9iqygviz3AGJnbJOLc8E | III.4.2.1.2 Creación y Validación de Orden | 1767862800000 | 6 días | 0 | 7 | 1.1.1.6.3.1 | Media | 3 | 1.1.1.6.3.1.3 |  |
| eu9p85Qws0RpZgcus0zX | 9iqygviz3AGJnbJOLc8E | III.4.2.1.2.2 Crear y configurar transiciones de estados de Ordenes | 1767877200000 | 4 horas | 0 | 8 | 1.1.1.6.3.1.3 | Media | 3 | 1.1.1.6.3.1.3.2 |  |
| f49iXg1TENyYX77SZLg9 | 9iqygviz3AGJnbJOLc8E | III.4.2.4.6 Ajuste de proceso post Creación de Orden tras pruebas unitarias de cliente | 1773838800000 | 4 horas | 0 | 7 | 1.1.1.6.3.4 | Media | 3 | 1.1.1.6.3.4.6 |  |
| f6ASIZgm8Hc2il47laoR | 9iqygviz3AGJnbJOLc8E | III.4.4.9.1 Configurar Reporte Documentos vencidos y por vencer | 1775653200000 | 1 día | 0 | 7 | 1.1.1.6.7.9 | Media | 3 | 1.1.1.6.7.9.1 |  |
| fEFx2wHsbZFyufhRUw7p | 9iqygviz3AGJnbJOLc8E | III.4.1.6 UNI configurar y cargar Transportes y Tipo | 1765184400000 | 1 día | 0 | 6 | 1.1.1.6.1 | Media | 3 | 1.1.1.6.1.6 |  |
| fbYxEzKjg1DJ4E7LCxR3 | 9iqygviz3AGJnbJOLc8E | III.4.4.4.3 Pruebas y ajustes | 1775480400000 | 4 horas | 0 | 7 | 1.1.1.6.7.7 | Media | 3 | 1.1.1.6.7.7.2 |  |
| fhuQqhFwSQGsOjYnpnHV | 9iqygviz3AGJnbJOLc8E | III.4.2.1.2.1 Crear y configurar estados de Ordenes | 1767862800000 | 4 horas | 0 | 8 | 1.1.1.6.3.1.3 | Media | 3 | 1.1.1.6.3.1.3.1 |  |
| fufNKJZK63YtkwkcWjDu | 9iqygviz3AGJnbJOLc8E | III.4.2.3.5 Unigis ajustar Transiciones de Estados tras pruebas unitarias | 1773306000000 | 2 días | 0 | 7 | 1.1.1.6.3.3 | Media | 3 | 1.1.1.6.3.3.7 |  |
| g1FJQ0FoaQij4NcbocJp | 9iqygviz3AGJnbJOLc8E | ETAPA V: Go Live y Estabilización | 1783335600000 | 29 días | 0 | 3 | 1.1 | Media | 3 | 1.1.3 |  |
| g3R2NnyCcZ279MMCDvp9 | 9iqygviz3AGJnbJOLc8E | III.1.1.2 Europastry desarrollar end-point Pedidos - Solicitud Confirmación y preparación - TMS-ERP para JSON Syncout (#2) | 1765890000000 | 1 día | 0 | 6 | 1.1.1.3.1 | Media | 3 | 1.1.1.3.1.2 |  |
| gKB9lpsfg5yg4FNlU0bE | 9iqygviz3AGJnbJOLc8E | III.4.2.3.3 Europastry probar en TEST transiciones de estados de Viajes | 1772787600000 | 2 días | 0 | 7 | 1.1.1.6.3.3 | Media | 3 | 1.1.1.6.3.3.5 |  |
| gYJXe7S6JmKcvkyXcjXd | 9iqygviz3AGJnbJOLc8E | III.4.4.10 Configurar Alarma Notificable de Documento Rechazado | 1776070800000 | 2,5 días | 0 | 6 | 1.1.1.6.7 | Media | 3 | 1.1.1.6.7.10 |  |
| gi3LXFp66xOnMcufE557 | 9iqygviz3AGJnbJOLc8E | Europastry | 1764730800000 | 182,25 días | 0 | 1 |  | Media | 3 | 1 |  |
| h9b3JVqL4jiTpw1Ee5ur | 9iqygviz3AGJnbJOLc8E | III.5.2.3 Pruebas Europastry en TEST de cobranzas v2 | 1775034000000 | 5 días | 0 | 6 | 1.1.1.7.2 | Media | 3 | 1.1.1.7.2.3 |  |
| hBt19y6y23gohmwXIY41 | 9iqygviz3AGJnbJOLc8E | III.7.2 Realizar ciclos de pruebas | 1780664400000 | 5 días | 0 | 5 | 1.1.1.9 | Media | 3 | 1.1.1.9.2 |  |
| hJCSHsFrXCMmWfGhw0tt | 9iqygviz3AGJnbJOLc8E | V.4 Dar capacitación a clientes sobre gestión de incidencias en producción | 1786532400000 | 2 días | 0 | 4 | 1.1.3 | Media | 3 | 1.1.3.4 |  |
| hKNVWSujZzzkoNFnNW86 | 9iqygviz3AGJnbJOLc8E | III.4.2.1.3.2 Crear y configurar transiciones de estados de Rutas | 1768568400000 | 4 horas | 0 | 8 | 1.1.1.6.3.1.4 | Media | 3 | 1.1.1.6.3.1.4.2 |  |
| hKux5hTwC6UgBIXxac4C | 9iqygviz3AGJnbJOLc8E | III.4.6.7.3 Pruebas y ajustes | 1778058000000 | 4 horas | 0 | 7 | 1.1.1.6.10.7 | Media | 3 | 1.1.1.6.10.7.2 |  |
| hPDbbhJ5vktzd08s5MbX | 9iqygviz3AGJnbJOLc8E | TMS Configurado y probado en TEST | 1781269200000 | 0 días | 0 | 4 | 1.1.1 | Media | 3 | 1.1.1.10 |  |
| hTvSv8M3IS5lA8ivFsu0 | 9iqygviz3AGJnbJOLc8E | Alarmas y notificaciones configuradas y disparándose automáticamente | 1776776400000 | 0 días | 0 | 5 | 1.1.1.6 | Media | 3 | 1.1.1.6.8 |  |
| heu5O9s6puAYQ1f4CLZF | 9iqygviz3AGJnbJOLc8E | III.4.2.1.3.3 Alta de zonas de planificación (Para cada Operación) | 1768813200000 | 4 horas | 0 | 8 | 1.1.1.6.3.1.4 | Media | 3 | 1.1.1.6.3.1.4.3 |  |
| hoRIOUuy4BtTWlmgOoZm | 9iqygviz3AGJnbJOLc8E | III.4.4.5 Configurar Alarma No salida de la nave | 1774962000000 | 1,5 días | 0 | 6 | 1.1.1.6.7 | Media | 3 | 1.1.1.6.7.5 |  |
| hxEhXxAdSGNhU7ocsISl | 9iqygviz3AGJnbJOLc8E | Aprobación para Go Live Obtenida | 1783335600000 | 0 días | 0 | 4 | 1.1.2 | Media | 3 | 1.1.2.3 |  |
| i0bXr8GRlMHuFsrptkc6 | 9iqygviz3AGJnbJOLc8E | III.1.1.1 Probar en TEST Pedidos - Creación, Modificación y Anulación MAPI ERP-TMS (#1) | 1765890000000 | 1 día | 0 | 6 | 1.1.1.3.3 | Media | 3 | 1.1.1.3.3.1 |  |
| i7Ids9fFmjTHhQCIH2ag | 9iqygviz3AGJnbJOLc8E | III.4.6.10.2 Configuración en entorno de test | 1778504400000 | 1 día | 0 | 7 | 1.1.1.6.10.10 | Media | 3 | 1.1.1.6.10.10.1 |  |
| i9rgN2RSAJRn5YzLu0Wn | 9iqygviz3AGJnbJOLc8E | III.5.2.1 Configurar y probar cobranzas v2 en TEST | 1773651600000 | 5 días | 0 | 6 | 1.1.1.7.2 | Media | 3 | 1.1.1.7.2.1 |  |
| iTtRRmaXn0aIcUcaOTBH | 9iqygviz3AGJnbJOLc8E | III.4.7.2 Configurar y probar fórmulas | 1779210000000 | 0 días | 0 | 6 | 1.1.1.6.12 | Media | 3 | 1.1.1.6.12.2 |  |
| ikhAITtG7iimmcpQp5hi | 9iqygviz3AGJnbJOLc8E | III.4.1.1 Europastry adjuntar datos de Empresa, Sucursal + Depósitos para UNI | 1764752400000 | 4 horas | 0 | 6 | 1.1.1.6.1 | Media | 3 | 1.1.1.6.1.1 |  |
| ip9pUllq3srNGSMLvm9e | 9iqygviz3AGJnbJOLc8E | III.4.2.4.5 Ajuste de proceso Adelanto de Preparación tras pruebas unitarias de cliente | 1773824400000 | 4 horas | 0 | 7 | 1.1.1.6.3.4 | Media | 3 | 1.1.1.6.3.4.5 |  |
| iqh7ie2Mhl95eDQ9dXWt | 9iqygviz3AGJnbJOLc8E | III.4.4.2 Europastry compartir lista y especificación de notificaciones (con lógica + maquetado html) | 1774602000000 | 4 horas | 0 | 6 | 1.1.1.6.7 | Media | 3 | 1.1.1.6.7.2 |  |
| isQbeC6PTaRJhSUdk7pq | 9iqygviz3AGJnbJOLc8E | III.4.1.16 UNI Configurar zonas geográficas | 1766149200000 | 2 días | 0 | 6 | 1.1.1.6.1 | Media | 3 | 1.1.1.6.1.16 |  |
| iuiw5h8HuncLd63HStkL | 9iqygviz3AGJnbJOLc8E | Creación de pedido y visualización validado en OM | 1767805200000 | 0 días | 0 | 7 | 1.1.1.6.3.1 | Media | 3 | 1.1.1.6.3.1.2 |  |
| izNYnHezjK619ZZQ3tQW | 9iqygviz3AGJnbJOLc8E | III.4.6.9.2 Configuración en entorno de test | 1778230800000 | 1 día | 0 | 7 | 1.1.1.6.10.9 | Media | 3 | 1.1.1.6.10.9.1 |  |
| jKcWMAhpK8PTCCKbZvpR | 9iqygviz3AGJnbJOLc8E | III.4.1.18 UNI configurar alta de Tipos de Documentos: REAT, CARNE, FTV, ATP | 1766581200000 | 1 día | 0 | 6 | 1.1.1.6.1 | Media | 3 | 1.1.1.6.1.18 | Hola esto es una prueba |
| jNKkksTh4w9sHduWJ6d9 | 9iqygviz3AGJnbJOLc8E | V.5 Iniciar período de soporte | 1786705200000 | 0 días | 0 | 4 | 1.1.3 | Media | 3 | 1.1.3.5 |  |
| jiXcpetw9mxshR7iQ49f | 9iqygviz3AGJnbJOLc8E | III.4.2.4.11 Ajuste de proceso Validación en Cambio de Estado Paradas tras pruebas unitarias de cliente | 1774256400000 | 4 horas | 0 | 7 | 1.1.1.6.3.4 | Media | 3 | 1.1.1.6.3.4.11 |  |
| jmxNWHWwH6S7umxktkz2 | 9iqygviz3AGJnbJOLc8E | III.4.4.7 Configurar Alarma Retrasos en entregas con horario | 1775221200000 | 1,5 días | 0 | 6 | 1.1.1.6.7 | Media | 3 | 1.1.1.6.7.7 |  |
| joYzfLKJfynA6cDIHjlX | 9iqygviz3AGJnbJOLc8E | III.4.2.1.3.10 Configurar proceso post ruteo automatico asignar Vehiculo, conductor y Referencia a Rutas | 1769518800000 | 2 días | 0 | 8 | 1.1.1.6.3.1.4 | Media | 3 | 1.1.1.6.3.1.4.10 |  |
| ju1xFA23PlmIPskefRPC | 9iqygviz3AGJnbJOLc8E | III.1.1.4 Ajustar en TEST Pedidos - Solicitud Confirmación y preparación - TMS-ERP para JSON Syncout (#2) | 1766494800000 | 4 horas | 0 | 6 | 1.1.1.3.3 | Media | 3 | 1.1.1.3.3.4 |  |
| jwyVASYXrSkcBqpB5jYo | 9iqygviz3AGJnbJOLc8E | III.4.2.1.5.4 Configurar Portal de Transporte | 1770368400000 | 4 días | 0 | 8 | 1.1.1.6.3.1.6 | Media | 3 | 1.1.1.6.3.1.6.4 |  |
| jy3oFzouppEgs1GVEzYe | 9iqygviz3AGJnbJOLc8E | III.4.7.4 Configurar y probar tipos de incidencias | 1779210000000 | 0 días | 0 | 6 | 1.1.1.6.12 | Media | 3 | 1.1.1.6.12.4 |  |
| k0ZXza2t7CewqA8bSr93 | 9iqygviz3AGJnbJOLc8E | FASE I - RTMF | 1764730800000 | 182,25 días | 0 | 2 | 1 | Media | 3 | 1.1 |  |
| kaRrqtNpUPJkUDHVNHKa | 9iqygviz3AGJnbJOLc8E | III.3.1.4 Acordar documentación de hoja de faltantes de carga | 1765962000000 | 4 horas | 0 | 6 | 1.1.1.5.1 | Media | 3 | 1.1.1.5.1.4 | Solicitar Template de documento al cliente |
| kbz2w0alr1Isi0f60UIU | 9iqygviz3AGJnbJOLc8E | III.4.2.1 Configurar y realizar pruebas unitarias de Workflows | 1766667600000 | 50,5 días | 0 | 6 | 1.1.1.6.3 | Media | 3 | 1.1.1.6.3.1 |  |
| ku4qxBuwB1tIwqlTawkB | 9iqygviz3AGJnbJOLc8E | III.2.2 Desarrollar y Configurar interfaces ERP | 1765803600000 | 17 días | 0 | 5 | 1.1.1.3 | Media | 3 | 1.1.1.3.1 |  |
| kx8Sb9I2JlACvyXfnwbd | 9iqygviz3AGJnbJOLc8E | III.4.6.9 Número de errores en la generación y gestión de albaranes. * | 1778230800000 | 1,5 días | 0 | 6 | 1.1.1.6.10 | Media | 3 | 1.1.1.6.10.9 |  |
| l4OkZseUaZO4HcRcxee3 | 9iqygviz3AGJnbJOLc8E | III.4.6.10 Porcentaje de documentación gestionada antes de su vencimiento. * | 1778504400000 | 1,5 días | 0 | 6 | 1.1.1.6.10 | Media | 3 | 1.1.1.6.10.10 |  |
| lDAO33xmTMcGDBm7ffsg | 9iqygviz3AGJnbJOLc8E | III.4.2.1.3.11 Configurar proceso Pre Validación en cambio Estado de Ruta a Confirmado | 1769691600000 | 4 horas | 0 | 8 | 1.1.1.6.3.1.4 | Media | 3 | 1.1.1.6.3.1.4.11 |  |
| la5ior60XiISkpzvkuZ1 | 9iqygviz3AGJnbJOLc8E | III.3.1.5 Acordar documentación de liquidación de cobro | 1765976400000 | 4 horas | 0 | 6 | 1.1.1.5.1 | Media | 3 | 1.1.1.5.1.5 | Solicitar Template de documento al cliente |
| loOM2XxV5eVcmVI2Xj5d | 9iqygviz3AGJnbJOLc8E | Ruteo automático configurado y funcionando | 1774357200000 | 0 días | 0 | 5 | 1.1.1.6 | Media | 3 | 1.1.1.6.4 |  |
| lrUj1MPr0JUzkOo1Rrq5 | 9iqygviz3AGJnbJOLc8E | III.1.1.9 Europastry desarrollar end-point Liquidación Tarifa - Preliquidación de Pago a Proveedores TMS-ERP para JSON Syncout (#9) | 1766667600000 | 2 días | 0 | 6 | 1.1.1.3.1 | Media | 3 | 1.1.1.3.1.9 |  |
| m1BS2xm6rrxUXNWjw3nH | 9iqygviz3AGJnbJOLc8E | III.6.1 Realizar pruebas y ajustar configuración | 1779886800000 | 4 días | 0 | 5 | 1.1.1.8 | Media | 3 | 1.1.1.8.2 |  |
| m44MV3SjEOsBqFWFad7Y | 9iqygviz3AGJnbJOLc8E | III.4.2.1.5.5 Alta de zonas de seguimiento, de control, peligro | 1770886800000 | 1 día | 0 | 8 | 1.1.1.6.3.1.6 | Media | 3 | 1.1.1.6.3.1.6.5 |  |
| m93Ia11QkKm5emYX7gyP | 9iqygviz3AGJnbJOLc8E | III.6.1 Preparar datos maestros y casos de prueba | 1779454800000 | 3 días | 0 | 5 | 1.1.1.8 | Media | 3 | 1.1.1.8.1 |  |
| mFZ4urs01M8tuc7OsKLj | 9iqygviz3AGJnbJOLc8E | III.4.4.4.3 Pruebas y ajustes | 1775206800000 | 4 horas | 0 | 7 | 1.1.1.6.7.6 | Media | 3 | 1.1.1.6.7.6.2 |  |
| mO0H6EvCdl9e5CelmeMw | 9iqygviz3AGJnbJOLc8E | III.4.7.1 Configurar y probar tarifas | 1779210000000 | 0 días | 0 | 6 | 1.1.1.6.12 | Media | 3 | 1.1.1.6.12.1 |  |
| mXXv2rhFVbENLXcPzfEP | 9iqygviz3AGJnbJOLc8E | III.1.1.3 Europastry configurar Pedidos - Confirmación y VL MAPI ERP-TMS (#3) | 1765976400000 | 1 día | 0 | 6 | 1.1.1.3.1 | Media | 3 | 1.1.1.3.1.3 |  |
| max1p75ay4V2GKmVOUzE | 9iqygviz3AGJnbJOLc8E | IV.2.2.3 Finalizar carga de datos maestros | 1782745200000 | 4 horas | 0 | 6 | 1.1.2.2.2 | Media | 3 | 1.1.2.2.2.3 |  |
| mf8Mw54LKV4XkrQaiwd8 | 9iqygviz3AGJnbJOLc8E | III.4.2.3.4 Europastry probar en TEST flujo de trabajo en módulos OM y Routing | 1773046800000 | 3 días | 0 | 7 | 1.1.1.6.3.3 | Media | 3 | 1.1.1.6.3.3.6 |  |
| mgfbtAu9UGyofZCtLsm5 | 9iqygviz3AGJnbJOLc8E | III.4.2.1.1.4 Configurar proceso Completar Pedido Cero | 1766998800000 | 2 días | 0 | 8 | 1.1.1.6.3.1.1 | Media | 3 | 1.1.1.6.3.1.1.4 |  |
| njW5FgG3Hr8c8C1ROVzA | 9iqygviz3AGJnbJOLc8E | III.3 Documentar requerimientos de desarrollo | 1765803600000 | 2,5 días | 0 | 4 | 1.1.1 | Media | 3 | 1.1.1.5 |  |
| o6jYro1Sbp1X2vrsaCFH | 9iqygviz3AGJnbJOLc8E | III.4.6.7 Tiempo de respuesta ante incidencias reportadas por clientes/call center. | 1777971600000 | 1,5 días | 0 | 6 | 1.1.1.6.10 | Media | 3 | 1.1.1.6.10.7 |  |
| oEIH315ZjZhjuWgJRTiD | 9iqygviz3AGJnbJOLc8E | III.4.7.6 Configurar y probar flujos de estados de liquidaciones | 1779210000000 | 0 días | 0 | 6 | 1.1.1.6.12 | Media | 3 | 1.1.1.6.12.6 |  |
| oVP9ybmgV4TDDD4NUfiy | 9iqygviz3AGJnbJOLc8E | III.4.2.4.3 Ajuste de proceso Validación de Pedidos tras pruebas unitarias de cliente | 1773738000000 | 4 horas | 0 | 7 | 1.1.1.6.3.4 | Media | 3 | 1.1.1.6.3.4.3 |  |
| ox07Oq7X0CFWOO5meeP1 | 9iqygviz3AGJnbJOLc8E | III.4.2.1.1.2 Crear y configurar transiciones de estados de Pedidos | 1766739600000 | 4 horas | 0 | 8 | 1.1.1.6.3.1.1 | Media | 3 | 1.1.1.6.3.1.1.2 |  |
| pBZP6Cf6nezAjAY6qdlf | 9iqygviz3AGJnbJOLc8E | III.4.2.3.2 Europastry probar en TEST transiciones de estados de Ordenes | 1767877200000 | 2 días | 0 | 7 | 1.1.1.6.3.3 | Media | 3 | 1.1.1.6.3.3.2 |  |
| pPHBFFxMl19gyTyToUlE | 9iqygviz3AGJnbJOLc8E | III.4.2.1.5.7 Configurar Categoria de Viaje | 1770987600000 | 4 horas | 0 | 8 | 1.1.1.6.3.1.6 | Media | 3 | 1.1.1.6.3.1.6.7 |  |
| pl1Ai9POOwi3LQA2qAUm | 9iqygviz3AGJnbJOLc8E | III.4.4.12 Europastry realizar pruebas unitarias de notificaciones en TEST | 1776430800000 | 2 días | 0 | 6 | 1.1.1.6.7 | Media | 3 | 1.1.1.6.7.12 |  |
| qCSjMq3zrugXPVfAAsV3 | 9iqygviz3AGJnbJOLc8E | III.4.2.1.2.5 Crear Proceso de Creacion de Ordenes desde Pedidos | 1768222800000 | 1 día | 0 | 8 | 1.1.1.6.3.1.3 | Media | 3 | 1.1.1.6.3.1.3.5 |  |

| id | projectId | title | startDate | durationText | percentComplete | outlineLevel | parentId | priority | tenantId | wbs |
| --- | --- | --- | --- | --- | --- | --- | --- | --- | --- | --- |
| qHPJK83Fe1l1GouiiyQ4 | 9iqygviz3AGJnbJOLc8E | III.4.2.1.5.15 Configurar Proceso de cambio de estado automatico de Parada | 1771923600000 | 4 horas | 0 | 8 | 1.1.1.6.3.1.6 | Media | 3 | 1.1.1.6.3.1.6.15 |
| qVIz6AXbUugiMcocFWIV | 9iqygviz3AGJnbJOLc8E | III.5.2 Realizar pruebas unitarias desarrollos | 1773651600000 | 19 días | 0 | 5 | 1.1.1.7 | Media | 3 | 1.1.1.7.2 |
| qvGqLeXZ7Y0Y56eGe18N | 9iqygviz3AGJnbJOLc8E | III.1.1.1 Mapear Pedidos - Creación, Modificación y Anulación (CrearOrdenPedido) ERP-TMS (#1) | 1764752400000 | 1 día | 0 | 6 | 1.1.1.1.1 | Media | 3 | 1.1.1.1.1.1 |
| rWuzS96rs5Ys2zatjSss | 9iqygviz3AGJnbJOLc8E | III.4.2.1.3.8 Configurar Tabla Z_DisponibilidadConductor | 1769418000000 | 1 día | 0 | 8 | 1.1.1.6.3.1.4 | Media | 3 | 1.1.1.6.3.1.4.8 |
| rkziR6uunDEG9lEUqzDc | 9iqygviz3AGJnbJOLc8E | III.4.2.4 Configurar y realizar pruebas de Procesos y SP | 1773651600000 | 6,5 días | 0 | 6 | 1.1.1.6.3 | Media | 3 | 1.1.1.6.3.4 |
| sEzZbJAS2P82WyLlEN1e | 9iqygviz3AGJnbJOLc8E | III.1.1.17 Probar en TEST Liquidación Tarifa - Preliquidación de Pago a Proveedores TMS-ERP para JSON Syncout (#9) | 1767013200000 | 1 día | 0 | 6 | 1.1.1.3.3 | Media | 3 | 1.1.1.3.3.17 |
| sNkK6atVnMjJKjwocFGx | 9iqygviz3AGJnbJOLc8E | III.4.2.1.5.4.3 Dashboard | 1770728400000 | 4 horas | 0 | 9 | 1.1.1.6.3.1.6.4 | Media | 3 | 1.1.1.6.3.1.6.4.3 |
| sY8dYPAFfocyaDbcPwAr | 9iqygviz3AGJnbJOLc8E | III.1.1 Realizar sesiones de mapeo de interfaces | 1764752400000 | 13 días | 0 | 5 | 1.1.1.1 | Media | 3 | 1.1.1.1.1 |
| tFbJ6rdSepOTz1OJC15R | 9iqygviz3AGJnbJOLc8E | IV.1.1 Preparar material para capacitación | 1781269200000 | 2 días | 0 | 5 | 1.1.2.1 | Media | 3 | 1.1.2.1.1 |
| th89B6sYvKS11mnzdrQL | 9iqygviz3AGJnbJOLc8E | III.4.2.4.12 Ajuste de proceso Creación de Parada Depósito en Banco tras pruebas unitarias de cliente | 1774270800000 | 4 horas | 0 | 7 | 1.1.1.6.3.4 | Media | 3 | 1.1.1.6.3.4.12 |
| u7T39Vpw29pBkd4sGwsm | 9iqygviz3AGJnbJOLc8E | III.4.1.2 Configurar y cargar Empresa Sucursal Operaciones + Depósitos | 1764766800000 | 4 horas | 0 | 6 | 1.1.1.6.1 | Media | 3 | 1.1.1.6.1.2 |
| u9rLRVGcmeBn6togUjd7 | 9iqygviz3AGJnbJOLc8E | III.1.1.9 Probar en TEST Viajes - Envío Paradas preparadas y Doc cobros ERP-TMS MAPI (#5) | 1766408400000 | 1 día | 0 | 6 | 1.1.1.3.3 | Media | 3 | 1.1.1.3.3.9 |
| uCArB7eURDiAf50PmC1b | 9iqygviz3AGJnbJOLc8E | III.4.2.1.5.11 Configurar proceso que actualice viajes y paradas post creación | 1771405200000 | 2 días | 0 | 8 | 1.1.1.6.3.1.6 | Media | 3 | 1.1.1.6.3.1.6.11 |
| uDDUCOu214WDP2yRzxAr | 9iqygviz3AGJnbJOLc8E | III.4.4.8 Configurar Alarma Salida de almacén y primera entrega | 1775552400000 | 1,5 días | 0 | 6 | 1.1.1.6.7 | Media | 3 | 1.1.1.6.7.8 |
| uHSBIfyiDwdOOLmXFRQv | 9iqygviz3AGJnbJOLc8E | III.4.2.1.3.13 Configurar Otras Restricciones de Planificacion | 1769778000000 | 4 horas | 0 | 8 | 1.1.1.6.3.1.4 | Media | 3 | 1.1.1.6.3.1.4.13 |
| uTu8puh5YmS4UIlqv9YU | 9iqygviz3AGJnbJOLc8E | III.4.2.1.6.6 Configurar proceso de creación de parada de Deposito en Banco | 1772614800000 | 1 día | 0 | 8 | 1.1.1.6.3.1.7 | Media | 3 | 1.1.1.6.3.1.7.6 |
| uXlV7Lawskh7mieMQS1V | 9iqygviz3AGJnbJOLc8E | III.4.2.4.2 Ajuste de proceso Completar Pedido 0 tras pruebas unitarias de cliente | 1773666000000 | 4 horas | 0 | 7 | 1.1.1.6.3.4 | Media | 3 | 1.1.1.6.3.4.2 |
| uiLljUpcRVgjbWtDPEhj | 9iqygviz3AGJnbJOLc8E | III.4.2.1.5.1 Crear y configurar estados de Viajes | 1770210000000 | 4 horas | 0 | 8 | 1.1.1.6.3.1.6 | Media | 3 | 1.1.1.6.3.1.6.1 |
| vMVaoSj6paT1Qfyt5XgM | 9iqygviz3AGJnbJOLc8E | III.4.2.1.1 Creación y Validación de Pedidos | 1766667600000 | 16,5 días | 0 | 7 | 1.1.1.6.3.1 | Media | 3 | 1.1.1.6.3.1.1 |
| vijF2oHVMfIkIx48Eim0 | 9iqygviz3AGJnbJOLc8E | III.4.7 Configurar y probar fleet - tarifación de pago a Proveedores (VERSION 2.0) | 1779210000000 | 0 días | 0 | 5 | 1.1.1.6 | Media | 3 | 1.1.1.6.12 |
| vpgYVazjhxkZJsZzjUGb | 9iqygviz3AGJnbJOLc8E | III.1.1.12 Ajustar en TEST Paradas - Confirmación de Entrega y Cobro TMS-ERP para JSON Syncout (#6) | 1766581200000 | 4 horas | 0 | 6 | 1.1.1.3.3 | Media | 3 | 1.1.1.3.3.12 |
| vySz4EJaTu3lzef6AmVk | 9iqygviz3AGJnbJOLc8E | III.4.6.6 Porcentaje de entregas con proof of delivery digitalizado. | 1777640400000 | 1,5 días | 0 | 6 | 1.1.1.6.10 | Media | 3 | 1.1.1.6.10.6 |
| vyvCKLKjPKiwHl6o9Viv | 9iqygviz3AGJnbJOLc8E | III.1.1.7 Europastry desarrollar end-point Viaje - Cierre de Liquidación de Cobros TMS-ERP para JSON Syncout (#7) | 1766494800000 | 1 día | 0 | 6 | 1.1.1.3.1 | Media | 3 | 1.1.1.3.1.7 |
| vzDOltXaOjAyhadPWOUB | 9iqygviz3AGJnbJOLc8E | III.4.6.5.3 Pruebas y ajustes | 1777626000000 | 4 horas | 0 | 7 | 1.1.1.6.10.5 | Media | 3 | 1.1.1.6.10.5.2 |
| wLxDQGoPEx6teG5AwEQL | 9iqygviz3AGJnbJOLc8E | III.1.1.13 Probar en TEST Viaje - Cierre de Liquidación de Cobros TMS-ERP para JSON Syncout (#7) | 1766581200000 | 1 día | 0 | 6 | 1.1.1.3.3 | Media | 3 | 1.1.1.3.3.13 |
| wsoF06rd6ln36qOFdujs | 9iqygviz3AGJnbJOLc8E | III.4.1.3 Europastry Compilar datos de DomicilioOrden para UNI (horarios, geolocalización y restricciones) | 1764838800000 | 16 horas | 0 | 6 | 1.1.1.6.1 | Media | 3 | 1.1.1.6.1.3 |
| wxNIx7B7rom84pMbkk9l | 9iqygviz3AGJnbJOLc8E | III.4.2.1.6 Crear y configurar transiciones de estados de Paradas | 1770195600000 | 4 horas | 0 | 8 | 1.1.1.6.3.1.5 | Media | 3 | 1.1.1.6.3.1.5.2 |
| wxkHLvAsLxpNJ3jSUfdF | 9iqygviz3AGJnbJOLc8E | III.6 Realizar pruebas end to end | 1779454800000 | 7 días | 0 | 4 | 1.1.1 | Media | 3 | 1.1.1.8 |
| xCkiEalMgbl7hN3r5rOz | 9iqygviz3AGJnbJOLc8E | III.1.1.4 Europastry desarrollar end-point Viajes - Envío Planificación y Creación TMS-ERP para JSON Syncout (#4) | 1766062800000 | 1 día | 0 | 6 | 1.1.1.3.1 | Media | 3 | 1.1.1.3.1.4 |
| xVueoD0XV4NLVhfYdaCs | 9iqygviz3AGJnbJOLc8E | III.4.4.4.2 Pruebas y ajustes | 1774947600000 | 4 horas | 0 | 7 | 1.1.1.6.7.4 | Media | 3 | 1.1.1.6.7.4.2 |
| xYcn23olGHn1lzT7XWNg | 9iqygviz3AGJnbJOLc8E | IV.1.2.8 Capacitación Usuarios Finales (Confirmación de entregas) | 1782118800000 | 1 día | 0 | 6 | 1.1.2.1.2 | Media | 3 | 1.1.2.1.2.8 |
| xi0laT6K9p2XSqcuGpJQ | 9iqygviz3AGJnbJOLc8E | III.4.4.3 Europastry probar Grupos y Usuarios configurados en TEST | 1779368400000 | 1 día | 0 | 6 | 1.1.1.6.15 | Media | 3 | 1.1.1.6.15.3 |
| y1331N5BJ72EwC0GGUFY | 9iqygviz3AGJnbJOLc8E | III.4.6.8.2 Configuración en entorno de test | 1778072400000 | 1 día | 0 | 7 | 1.1.1.6.10.8 | Media | 3 | 1.1.1.6.10.8.1 |
| y7XJ3Cj7HKxbi5lsCnhl | 9iqygviz3AGJnbJOLc8E | III.4.4.11 Europastry realizar pruebas unitarias de alarmas en TEST | 1776258000000 | 2 días | 0 | 6 | 1.1.1.6.7 | Media | 3 | 1.1.1.6.7.11 |
| yDG1cwPVl0c4OT7HmKtq | 9iqygviz3AGJnbJOLc8E | III.4.1 Preparar y cargar datos maestros básicos para configuración | 1764752400000 | 16,5 días | 0 | 5 | 1.1.1.6 | Media | 3 | 1.1.1.6.1 |
| yfsrl6RRSM1NvRMiSBUB | 9iqygviz3AGJnbJOLc8E | III.4.6.4.3 Pruebas y ajustes | 1777467600000 | 4 horas | 0 | 7 | 1.1.1.6.10.4 | Media | 3 | 1.1.1.6.10.4.2 |
| ykMvNNU6OFp8TDugtgMm | 9iqygviz3AGJnbJOLc8E | IV.2.2.2 Solicitar pasaje a producción | 1782738000000 | 2 horas | 0 | 6 | 1.1.2.2.2 | Media | 3 | 1.1.2.2.2.2 |
| z9zXYaG4dbQZW3RV1Kzj | 9iqygviz3AGJnbJOLc8E | III.4.2.1.5 Creación y Validación de Viajes | 1770210000000 | 14 días | 0 | 7 | 1.1.1.6.3.1 | Media | 3 | 1.1.1.6.3.1.6 |
| zBCElqQMZVGjQpy9CJpy | 9iqygviz3AGJnbJOLc8E | III.4.4.3 Configurar Parametros de envio de noticacion por mail en test | 1774616400000 | 4 horas | 0 | 6 | 1.1.1.6.7 | Media | 3 | 1.1.1.6.7.3 |
| zETQCNCsjnZEgRnyLyc4 | 9iqygviz3AGJnbJOLc8E | III.4.6.12 Unigis realizar ajustes de reportes en TEST tras pruebas Europastry | 1779094800000 | 2 días | 0 | 6 | 1.1.1.6.10 | Media | 3 | 1.1.1.6.10.12 |
| zlmVB9q43i4Pd1crXJvY | 9iqygviz3AGJnbJOLc8E | III.4.7.7 Configurar y probar liquidaciones | 1779210000000 | 0 días | 0 | 6 | 1.1.1.6.12 | Media | 3 | 1.1.1.6.12.7 |
